# SmartTouchCRM V 1.0 - 03/28/2014

How a schedule from MS Project changed from version to version. A marks actual dates.

## Version 1 (data date 2013-10-01, saved 2014-03-28, file SmartTouchCRM V 1.0 - 03282014.mpp)

Note of the change: adding to git

| ID | WBS | Task | Duration | Start | Finish | Predecessors | Complete | Total float | Constraint |
| --- | --- | --- | --- | --- | --- | --- | --- | --- | --- |
| 1 | 1 | **Product Planning Phase** | 45.12d | 2013-10-01 A | 2013-12-03 A |  | 100% |  |  |
| 2 | 1.1 | **Product Initiation Process** | 17d | 2013-10-01 A | 2013-10-23 A |  | 100% |  |  |
| 3 |  | Project proposal as needed and submit for final approval | 4.38d | 2013-10-01 A | 2013-10-07 A |  | 100% |  | start no earlier than 2013-10-01 |
| 4 |  | Core Team Joining - Business Overview Meetings | 6d | 2013-10-09 A | 2013-10-16 A |  | 100% |  | start no earlier than 2013-10-09 |
| 5 |  | Product Kickoff Meeting | 1d | 2013-10-17 A | 2013-10-17 A |  | 100% |  | start no earlier than 2013-10-17 |
| 6 |  | Project business overview meetings by alan | 3d | 2013-10-18 A | 2013-10-22 A |  | 100% |  | start no earlier than 2013-10-18 |
| 7 |  | Revise project proposal as needed and submit for final approval | 1d | 2013-10-23 A | 2013-10-23 A |  | 100% |  | start no earlier than 2013-10-23 |
| 8 | 1.2 | **Project Start-up Processes** | 13d | 2013-10-24 A | 2013-11-12 A |  | 100% |  |  |
| 9 |  | Identify Team Members & Project Management | 7d | 2013-10-24 A | 2013-11-04 A |  | 100% |  | start no earlier than 2013-10-24 |
| 10 |  | Identify the basic Infrastructure needs (Software and Hardware) | 5d | 2013-11-05 A | 2013-11-12 A |  | 100% |  | start no earlier than 2013-11-05 |
| 11 | 1.3 | **Project Control/Reporting Processes** | 13.12d | 2013-10-28 A | 2013-11-14 A |  | 100% |  |  |
| 12 |  | Establish Change Control Process | 6.12d | 2013-10-28 A | 2013-11-05 A |  | 100% |  | start no earlier than 2013-10-28 |
| 13 |  | Establish Issue Management Process | 3.12d | 2013-11-05 A | 2013-11-08 A |  | 100% |  | start no earlier than 2013-11-05 |
| 14 |  | Establish Status Tracking and Reporting Process | 4.12d | 2013-11-08 A | 2013-11-14 A |  | 100% |  | start no earlier than 2013-11-08 |
| 15 | 1.4 | **Requirements Analysis Phase** | 22.88d | 2013-10-17 A | 2013-11-18 A |  | 100% |  |  |
| 16 |  | Map out current and future Technology/Business Plan (Big Picture) | 4.88d | 2013-10-17 A | 2013-10-23 A |  | 100% |  | start no earlier than 2013-10-17 |
| 17 |  | Meeting with Alan/Robert/Grant | 0.88d | 2013-10-18 A | 2013-10-18 A |  | 100% |  | start no earlier than 2013-10-18 |
| 18 |  | Competitive Analysis - Documentation and Key Features | 3.88d | 2013-10-22 A | 2013-10-25 A |  | 100% |  | start no earlier than 2013-10-22 |
| 19 |  | Review the CRM majors in detail - feature by feature | 3.88d | 2013-10-28 A | 2013-10-31 A |  | 100% |  | start no earlier than 2013-10-28 |
| 20 |  | Presentation of technology/business plan to project team | 0.88d | 2013-11-11 A | 2013-11-11 A |  | 100% |  | start no earlier than 2013-11-11 |
| 21 |  | Statement of business requirements, impacts and prioritization of initiatives | 2.88d | 2013-11-13 A | 2013-11-15 A |  | 100% |  | start no earlier than 2013-11-13 |
| 22 |  | Current systems review & gap analysis | 1.88d | 2013-11-15 A | 2013-11-18 A |  | 100% |  | start no earlier than 2013-11-15 |
| 23 | 1.5 | **Functional Requirements Document (FSD)** | 30.88d | 2013-10-17 A | 2013-11-28 A |  | 100% |  |  |
| 24 |  | Document FSD & Review FSD | 30.88d | 2013-10-17 A | 2013-11-28 A |  | 100% |  | start no earlier than 2013-10-17 |
| 25 |  | Review FSD & Modifications | 30.88d | 2013-10-17 A | 2013-11-28 A |  | 100% |  | start no earlier than 2013-10-17 |
| 26 | 1.6 | **Approval of the FSD by the steering committee (Stakeholders)** | 5d | 2013-11-26 A | 2013-12-03 A |  | 100% |  |  |
| 27 |  | Cost/Benefit/Risk Analysis - Complex features | 2d | 2013-11-26 A | 2013-11-28 A |  | 100% |  | start no earlier than 2013-11-26 |
| 28 |  | Global Strategy/Competition - Multiple Verticals - Analysis | 2d | 2013-11-29 A | 2013-12-03 A |  | 100% |  | start no earlier than 2013-11-29 |
| 29 | 1.7 | **Resource Grouping and Defining Roles** | 19.88d | 2013-10-04 A | 2013-10-31 A |  | 100% |  |  |
| 30 |  | Assemble internal and external teams to launch project | 0.88d | 2013-10-04 A | 2013-10-05 A |  | 100% |  | start no earlier than 2013-10-04 |
| 31 |  | Assemble needed GUI and system design expertise | 3.88d | 2013-10-08 A | 2013-10-12 A |  | 100% |  | start no earlier than 2013-10-08 |
| 32 |  | Assemble needed domain analyst & analyse requirements | 3.88d | 2013-10-15 A | 2013-10-18 A |  | 100% |  | start no earlier than 2013-10-15 |
| 33 |  | Assemble needed programming expertise | 5.88d | 2013-10-24 A | 2013-10-31 A |  | 100% |  | start no earlier than 2013-10-24 |
| 34 | 1.8 | **Development Infrastructure Set-up & Deployment Planning** | 17.88d | 2013-11-05 A | 2013-11-28 A |  | 100% |  |  |
| 35 |  | Identify tools, technical requirements and e-infrastructure | 7d | 2013-11-05 A | 2013-11-14 A |  | 100% |  | start no earlier than 2013-11-05 |
| 36 |  | MSDN & Visual studio licenses | 2d | 2013-11-22 A | 2013-11-26 A |  | 100% |  | start no earlier than 2013-11-22 |
| 37 |  | Review needed technology application, hardware, software and network requirements | 3.88d | 2013-11-18 A | 2013-11-21 A |  | 100% |  | start no earlier than 2013-11-18 |
| 38 |  | Identify & Discuss Disparities between existing environment and recommended | 7.88d | 2013-11-11 A | 2013-11-20 A |  | 100% |  | start no earlier than 2013-11-11 |
| 39 |  | Design & document infra plans with scalability & availability options & projected growth | 4.88d | 2013-11-18 A | 2013-11-22 A |  | 100% |  | start no earlier than 2013-11-18 |
| 40 |  | Setup Development Environment | 2d | 2013-11-26 A | 2013-11-28 A |  | 100% |  | start no earlier than 2013-11-26 |
| 41 |  | Set up Development Workstations | 2d | 2013-11-26 A | 2013-11-28 A |  | 100% |  | start no earlier than 2013-11-26 |
| 42 |  | Install Visual Stuidio.Net, TFS, Dev tools & other needed applications | 7.88d | 2013-11-19 A | 2013-11-28 A |  | 100% |  | start no earlier than 2013-11-19 |
| 43 | 2 | **Product Implementation Phase** | 235d | 2013-10-25 A | 2014-09-19 |  | 39% | 25.59d |  |
| 44 | 2.1 | **Design / Review Module Moqups** | 38d | 2013-10-25 A | 2013-12-18 |  | 97% | 222.59d |  |
| 45 |  | Contacts Module | 6.12d | 2013-10-25 A | 2013-11-04 A |  | 100% |  | start no earlier than 2013-10-25 |
| 46 |  | Campaigns Module | 7.38d | 2013-11-01 A | 2013-11-12 A |  | 100% |  | start no earlier than 2013-11-01 |
| 47 |  | Marketing Automation | 5.75d | 2013-11-12 A | 2013-11-19 A |  | 100% |  | start no earlier than 2013-11-12 |
| 48 |  | Internet Forms / Lead Capture | 6.12d | 2013-11-12 A | 2013-11-20 A |  | 100% |  | start no earlier than 2013-11-12 |
| 49 |  | Personal Settings | 6.12d | 2013-11-14 A | 2013-11-22 A |  | 100% |  | start no earlier than 2013-11-14 |
| 50 |  | Account Admin Settings | 5.88d | 2013-11-21 A | 2013-11-28 A |  | 100% |  | start no earlier than 2013-11-21 |
| 51 |  | Super Admin - Accounts Management | 2.88d | 2013-11-26 A | 2013-11-28 A |  | 100% |  | start no earlier than 2013-11-26 |
| 52 |  | Account Dashboard | 3d | 2013-11-29 A | 2013-12-04 A |  | 100% |  | start no earlier than 2013-11-29 |
| 53 |  | Reports | 6.12d | 2013-12-05 A | 2013-12-13 |  | 91% | 225.46d | start no earlier than 2013-12-05 |
| 54 |  | 3rd Party & External Components Integrations | 3d | 2013-12-13 A | 2013-12-18 |  | 60% | 222.59d | start no earlier than 2013-12-13 |
| 55 | 2.2 | **Finalizing Prototypes & Interface Documents - Business Sign-off** | 47.84d | 2013-11-01 A | 2014-01-07 |  | 93% | 207.87d |  |
| 56 |  | Contacts Module | 5.41d | 2013-11-01 A | 2013-11-08 A | 45 | 100% |  | start no earlier than 2013-11-01 |
| 57 |  | Campaigns Module | 6.08d | 2013-11-08 A | 2013-11-18 A | 56 | 100% |  | start no earlier than 2013-11-08 |
| 58 |  | Marketing Automation | 5.46d | 2013-11-15 A | 2013-11-22 A | 57 | 100% |  | start no earlier than 2013-11-15 |
| 59 |  | Internet Forms / Lead Capture | 5.66d | 2013-11-22 A | 2013-11-29 A | 58 | 100% |  | start no earlier than 2013-11-22 |
| 60 |  | Personal Settings | 8.01d | 2013-12-02 A | 2013-12-12 A | 59 | 100% |  | start no earlier than 2013-12-02 |
| 61 |  | Account Admin Settings | 8.04d | 2013-12-09 A | 2013-12-19 A | 60 | 100% |  | start no earlier than 2013-12-09 |
| 62 |  | Super Admin - Accounts Management | 5.47d | 2013-12-17 A | 2013-12-24 A | 61 | 100% |  | start no earlier than 2013-12-17 |
| 63 |  | Account Dashboard | 6.08d | 2013-12-20 A | 2013-12-30 A | 62 | 100% |  | start no earlier than 2013-12-20 |
| 64 |  | Reports | 7.45d | 2013-12-25 A | 2014-01-03 | 63 | 83% | 0d | start no earlier than 2013-12-25 |
| 65 |  | 3rd Party & External Components Integrations | 3.85d | 2014-01-02 A | 2014-01-07 | 64 | 16% | 207.87d | start no earlier than 2014-01-02 |
| 66 | 2.3 | **Development Design Plan** | 169d | 2013-11-08 A | 2014-07-03 |  | 14% | 81.59d |  |
| 67 |  | Design and Document Solution Architecture. | 4d | 2013-11-20 A | 2013-11-26 |  | 72% | 238.59d | start no earlier than 2013-11-20 |
| 68 |  | Architectural Design Reviews & Technical Meetings | 8.38d | 2013-12-06 A | 2013-12-18 A |  | 100% |  | start no earlier than 2013-12-06 |
| 69 |  | Establishing Coding Guidelines and Developers Code Standards | 3.75d | 2013-11-14 A | 2013-11-19 A |  | 100% |  | start no earlier than 2013-11-14 |
| 70 |  | Design and Review Deployment Strategy | 3.88d | 2013-11-15 A | 2013-11-20 A |  | 100% |  | start no earlier than 2013-11-15 |

| ID | WBS | Task | Duration | Start | Finish | Predecessors | Complete | Total float | Constraint |
| --- | --- | --- | --- | --- | --- | --- | --- | --- | --- |
| 71 |  | Identify the Components for POC's and Validating Components | 160d | 2013-11-21 A | 2014-07-03 |  | 1% | 81.59d | finish no earlier than 2014-07-01 |
| 72 |  | Design & Set-up Solution Foundation Framwork | 2.88d | 2013-11-26 A | 2013-11-28 A |  | 100% |  | start no earlier than 2013-11-26 |
| 73 |  | Architecture Guidelines Design, R&D on Tools and APIs. | 9.12d | 2013-12-03 A | 2013-12-16 A |  | 100% |  | start no earlier than 2013-12-03 |
| 74 |  | DB Architecture Design Review and Analysis | 142d | 2013-12-14 A | 2014-07-01 |  | 1% | 82.71d | finish no earlier than 2014-07-01 |
| 75 |  | Application DB Schema Model Design Review | 3.88d | 2013-12-18 A | 2013-12-23 A |  | 100% |  | start no earlier than 2013-12-18 |
| 76 |  | Review DB Data Model Design Approaches & Establish DB Design Standards | 3.88d | 2013-12-24 A | 2013-12-27 A |  | 100% |  | start no earlier than 2013-12-24 |
| 77 |  | Review Requirements documents & Plan for Development | 3.12d | 2014-01-03 A | 2014-01-08 A |  | 100% |  | start no earlier than 2014-01-03 |
| 78 |  | Approval by project team of preliminary Solution design document | 2.88d | 2013-11-08 A | 2013-11-12 A |  | 100% |  | start no earlier than 2013-11-08 |
| 79 | 2.4 | **QA Test Preparations & Planning** | 56.12d | 2013-11-05 A | 2014-01-22 |  | 85% | 197.46d |  |
| 80 |  | Design & Document Test Strategy Plan | 7.88d | 2013-11-05 A | 2013-11-14 A |  | 100% |  | start no earlier than 2013-11-05 |
| 81 |  | Identify Scope for Test Cases and Review Interface Documents | 39.88d | 2013-11-12 A | 2014-01-06 A |  | 100% |  | start no earlier than 2013-11-12 |
| 82 |  | Document Test Cases for Final Signed-off Modules | 40.12d | 2013-11-12 A | 2014-01-07 |  | 68% | 208.46d | start no earlier than 2013-11-12 |
| 83 |  | Review and Finalize Test Cases | 3.12d | 2014-01-07 A | 2014-01-10 |  | 22% | 205.46d | start no earlier than 2014-01-07 |
| 84 |  | Identify & Define UI Test Guidelines | 3.12d | 2014-01-10 A | 2014-01-15 A |  | 100% |  | start no earlier than 2014-01-10 |
| 85 |  | Evaluate and Finlize on QA Load/Performance/ Stress Testing Tools | 5.12d | 2014-01-15 A | 2014-01-22 A |  | 100% |  | start no earlier than 2014-01-15 |
| 86 | 2.5 | **Application Designing & Development Preparation** | 41d | 2013-12-03 A | 2014-01-29 |  | 97% | 192.59d |  |
| 87 | 2.5.1 | **SOA Practices** | 8.88d | 2013-12-03 A | 2013-12-13 A |  | 100% |  |  |
| 88 |  | Identify Repositories | 1.88d | 2013-12-03 A | 2013-12-04 A |  | 100% |  | start no earlier than 2013-12-03 |
| 89 |  | Building Repositories for Accounts | 1.88d | 2013-12-04 A | 2013-12-05 A |  | 100% |  | start no earlier than 2013-12-04 |
| 90 |  | Building Repositories for CRM Activities | 1.88d | 2013-12-04 A | 2013-12-05 A |  | 100% |  | start no earlier than 2013-12-04 |
| 91 |  | DEV Testing of repositories. | 0.88d | 2013-12-06 A | 2013-12-07 A |  | 100% |  | start no earlier than 2013-12-06 |
| 92 |  | Odata,Web API - Standard Library Design and Development | 3.88d | 2013-12-10 A | 2013-12-13 A |  | 100% |  | start no earlier than 2013-12-10 |
| 93 | 2.5.2 | **Web UI Application Design Practices** | 10d | 2013-12-17 A | 2013-12-31 |  | 98% | 213.59d |  |
| 94 |  | MVC,MVVM Architectural View - Model Design | 2.88d | 2013-12-17 A | 2013-12-19 A |  | 100% |  | start no earlier than 2013-12-17 |
| 95 |  | Identify UI Components for Integration and Designing | 4d | 2013-12-18 A | 2013-12-24 A |  | 100% |  | start no earlier than 2013-12-18 |
| 96 |  | Kendo UI - Framwork Update and Integration | 5d | 2013-12-24 A | 2013-12-31 | 95 | 95% | 213.59d | start no earlier than 2013-12-24 |
| 97 | 2.5.3 | **Client Side Libraries** | 7.88d | 2013-12-11 A | 2013-12-20 A |  | 100% |  |  |
| 98 |  | Identify Jquery Bundels | 2.88d | 2013-12-11 A | 2013-12-14 A |  | 100% |  | start no earlier than 2013-12-11 |
| 99 |  | Identify Scripts Essential | 2.88d | 2013-12-11 A | 2013-12-14 A |  | 100% |  | start no earlier than 2013-12-11 |
| 100 |  | Identify 3rd Party Components Required (Kendo UI, Knockout JS, Node JS) | 2.88d | 2013-12-11 A | 2013-12-14 A |  | 100% |  | start no earlier than 2013-12-11 |
| 101 |  | Creating Solution Library Plan | 1.88d | 2013-12-19 A | 2013-12-20 A |  | 100% |  | start no earlier than 2013-12-19 |
| 102 | 2.5.4 | **Caching & Exception Logging** | 5.88d | 2014-01-02 A | 2014-01-09 A |  | 100% |  |  |
| 103 |  | Application Caching | 5.12d | 2014-01-02 A | 2014-01-09 A |  | 100% |  | start no earlier than 2014-01-02 |
| 104 |  | Exception Handling & Logging | 5.88d | 2014-01-02 A | 2014-01-09 A |  | 100% |  | start no earlier than 2014-01-02 |
| 105 | 2.5.5 | **Application Security** | 5d | 2014-01-22 A | 2014-01-29 |  | 80% | 192.59d |  |
| 106 |  | MembershipProvider for authentication & authorization | 5d | 2014-01-22 A | 2014-01-29 |  | 80% | 192.59d | start no earlier than 2014-01-22 |
| 107 | 2.6 | **Continuous Integration Setup** | 9d | 2013-12-21 A | 2014-01-02 A |  | 100% |  |  |
| 108 |  | TFS - Build Repositories Confirguration Set-up | 2d | 2013-12-21 A | 2013-12-24 A |  | 100% |  | start no earlier than 2013-12-21 |
| 109 |  | Source Controller | 1.88d | 2013-12-26 A | 2013-12-28 A |  | 100% |  | start no earlier than 2013-12-26 |
| 110 |  | Build Management | 2.88d | 2013-12-31 A | 2014-01-02 A |  | 100% |  | start no earlier than 2013-12-31 |
| 111 | 2.7 | **Functional Development** | 174d | 2014-01-20 A | 2014-09-19 |  | 24% | 25.59d |  |
| 112 | 2.7.1 | **Design & Develop Contacts Module** | 24d | 2014-01-20 A | 2014-02-21 |  | 95% | 175.59d |  |
| 113 |  | Design Review and Finalize Data Model | 2d | 2014-01-20 A | 2014-01-22 A |  | 100% |  |  |
| 114 |  | Integration of Final UI from Prototypes | 5d | 2014-01-22 A | 2014-01-29 A | 113 | 100% |  |  |
| 115 |  | Development of Module | 20d | 2014-01-22 A | 2014-02-19 | 114 | 95% | 0.87d |  |
| 116 |  | Functional Testing of Module | 1d | 2014-02-19 A | 2014-02-20 | 115 | 87% | 0.7d |  |
| 117 |  | Bug Fixing & Stabilize code for Contacts | 1d | 2014-02-20 A | 2014-02-21 | 116 | 70% | 175.59d |  |
| 118 | 2.7.2 | **Design & Develop Campaigns Module** | 41d | 2014-02-10 A | 2014-04-07 |  | 47% | 143.71d |  |
| 119 |  | Design Review and Finalize Data Model | 3d | 2014-02-10 A | 2014-02-12 |  | 70% | 0.67d | start no earlier than 2014-02-08 |
| 120 |  | Integration of Final UI from Prototypes | 1d | 2014-02-13 A | 2014-02-13 | 119 | 67% | 0.5d | start no earlier than 2014-02-12 |
| 121 |  | Development of Module | 30d | 2014-02-14 A | 2014-03-27 | 120 | 56% | 143.71d | start no earlier than 2014-02-13 |
| 122 |  | Functional Testing of Module | 5d | 2014-03-28 | 2014-04-03 | 121 |  | 143.71d | start no earlier than 2014-03-27 |
| 123 |  | Bug Fixing & Stabilize code for Campaigns | 2d | 2014-04-04 | 2014-04-07 | 122 |  | 143.71d | start no earlier than 2014-04-03 |
| 124 | 2.7.3 | **Design & Develop Marketing Automation Module** | 41d | 2014-02-14 | 2014-04-11 |  |  | 0.5d |  |
| 125 |  | Design Review and Finalize Data Model | 3d | 2014-02-14 | 2014-02-18 | 120 |  | 0.5d | start no earlier than 2014-02-13 |
| 126 |  | Integration of Final UI from Prototypes | 1d | 2014-02-19 | 2014-02-19 | 125 |  | 0.5d | start no earlier than 2014-02-18 |
| 127 |  | Development of Module | 30d | 2014-02-20 | 2014-04-02 | 126 |  | 0.5d | start no earlier than 2014-02-19 |
| 128 |  | Functional Testing of Module | 5d | 2014-04-03 | 2014-04-09 | 127 |  | 139.71d | start no earlier than 2014-04-02 |
| 129 |  | Bug Fixing & Stabilize code for Marketing Automation | 2d | 2014-04-10 | 2014-04-11 | 128 |  | 139.71d | start no earlier than 2014-04-09 |
| 130 | 2.7.4 | **Design & Develop Internet Forms/Lead Captures Module** | 24d | 2014-04-03 | 2014-05-06 |  |  | 0.5d |  |
| 131 |  | Design Review and Finalize Data Model | 2d | 2014-04-03 | 2014-04-04 | 127 |  | 0.5d | start no earlier than 2014-04-02 |
| 132 |  | Integration of Final UI from Prototypes | 1d | 2014-04-07 | 2014-04-07 | 131 |  | 0.5d | start no earlier than 2014-04-04 |
| 133 |  | Development of Module | 15d | 2014-04-08 | 2014-04-28 | 132 |  | 0.5d | start no earlier than 2014-04-07 |
| 134 |  | Functional Testing of Module | 4d | 2014-04-29 | 2014-05-02 | 133 |  | 0.5d | start no earlier than 2014-04-28 |
| 135 |  | Bug Fixing & Stabilize code for Internet Forms / Lead Captures | 2d | 2014-05-05 | 2014-05-06 | 134 |  | 122.12d | start no earlier than 2014-05-02 |
| 136 | 2.7.5 | **Design & Develop Personal Settings Module** | 19d | 2014-04-08 | 2014-05-02 |  |  | 0.5d |  |
| 137 |  | Design Review and Finalize Data Model | 2d | 2014-04-08 | 2014-04-09 | 132 |  | 91.12d | start no earlier than 2014-04-07 |
| 138 |  | Integration of Final UI from Prototypes | 1d | 2014-04-10 | 2014-04-10 | 137 |  | 91.12d | start no earlier than 2014-04-09 |
| 139 |  | Development of Module | 10d | 2014-04-11 | 2014-04-24 | 138 |  | 91.12d | start no earlier than 2014-04-10 |
| 140 |  | Functional Testing of Module | 4d | 2014-04-25 | 2014-04-30 | 139 |  | 91.12d | start no earlier than 2014-04-24 |

| ID | WBS | Task | Duration | Start | Finish | Predecessors | Complete | Total float | Constraint |
| --- | --- | --- | --- | --- | --- | --- | --- | --- | --- |
| 141 |  | Bug Fixing & Stabilize code for Personal Settings | 2d | 2014-05-01 | 2014-05-02 | 140 |  | 124.12d | start no earlier than 2014-04-30 |
| 142 | 2.7.6 | **Design & Develop Account Admin Settings Module** | 34d | 2014-05-05 A | 2014-06-19 |  | 17% | 90.71d |  |
| 143 |  | Design Review and Finalize Data Model | 2d | 2014-05-05 A | 2014-05-06 | 134 | 25% | 0.33d | start no earlier than 2014-05-02 |
| 144 |  | Integration of Final UI from Prototypes | 1d | 2014-05-07 A | 2014-05-07 | 143 | 33% | 4.69d | start no earlier than 2014-05-06 |
| 145 |  | Development of Module | 25d | 2014-05-08 A | 2014-06-11 | 144 | 19% | 0.4d | start no earlier than 2014-05-07 |
| 146 |  | Functional Testing of Module | 4d | 2014-06-12 A | 2014-06-17 | 145 | 10% | 0.29d | start no earlier than 2014-06-11 |
| 147 |  | Bug Fixing & Stabilize code for Account Admin Settings | 2d | 2014-06-18 | 2014-06-19 | 146 |  | 90.71d | start no earlier than 2014-06-17 |
| 148 | 2.7.7 | **Design & Develop Super Admin - Accounts Management Module** | 20d | 2014-05-01 A | 2014-05-28 |  | 16% | 106.71d |  |
| 149 |  | Design Review and Finalize Data Model | 2d | 2014-05-01 A | 2014-05-02 | 140 | 25% | 0.2d | start no earlier than 2014-04-30 |
| 150 |  | Integration of Final UI from Prototypes | 1d | 2014-05-05 A | 2014-05-05 | 149 | 20% | 2.5d | start no earlier than 2014-05-02 |
| 151 |  | Development of Module | 15d | 2014-05-06 A | 2014-05-26 | 150 | 17% | 91.71d | start no earlier than 2014-05-05 |
| 152 |  | Functional Testing of Module | 1d | 2014-05-27 | 2014-05-27 | 151 |  | 91.71d | start no earlier than 2014-05-26 |
| 153 |  | Bug Fixing & Stabilize code for Super Admin - Accounts Management | 1d | 2014-05-28 | 2014-05-28 | 152 |  | 106.71d | start no earlier than 2014-05-27 |
| 154 | 2.7.8 | **Design & Develop Account Dashboard Module** | 16d | 2014-05-28 | 2014-06-18 |  |  | 91.71d |  |
| 155 |  | Design Review and Finalize Data Model | 2d | 2014-05-28 | 2014-05-29 | 152 |  | 91.71d | start no earlier than 2014-05-27 |
| 156 |  | Integration of Final UI from Prototypes | 1d | 2014-05-30 | 2014-05-30 | 155 |  | 91.71d | start no earlier than 2014-05-29 |
| 157 |  | Development of Module | 7d | 2014-06-02 | 2014-06-10 | 156 |  | 91.71d | start no earlier than 2014-05-30 |
| 158 |  | Functional Testing of Module | 4d | 2014-06-11 | 2014-06-16 | 157 |  | 91.71d | start no earlier than 2014-06-10 |
| 159 |  | Bug Fixing & Stabilize code for Account Dashboard | 2d | 2014-06-17 | 2014-06-18 | 158 |  | 91.71d | start no earlier than 2014-06-16 |
| 160 | 2.7.9 | **Design & Develop Account Reports Module** | 29d | 2014-06-18 | 2014-07-28 |  |  | 0.43d |  |
| 161 |  | Design Review and Finalize Data Model | 2d | 2014-06-18 | 2014-06-19 | 146 |  | 0.29d | start no earlier than 2014-06-17 |
| 162 |  | Integration of Final UI from Prototypes | 1d | 2014-06-20 | 2014-06-20 | 161 |  | 0.29d | start no earlier than 2014-06-19 |
| 163 |  | Development of Module | 20d | 2014-06-23 | 2014-07-18 | 162 |  | 0.29d | start no earlier than 2014-06-20 |
| 164 |  | Functional Testing of Module | 4d | 2014-07-21 | 2014-07-24 | 163 |  | 0.29d | start no earlier than 2014-07-18 |
| 165 |  | Bug Fixing & Stabilize code for Reports | 2d | 2014-07-25 | 2014-07-28 | 164 |  | 63.12d | start no earlier than 2014-07-24 |
| 166 | 2.7.10 | **Design & Develop 3rd Party Components and Integrations** | 41d | 2014-07-24 A | 2014-09-19 |  | 35% | 25.59d |  |
| 167 |  | Design Review and Finalize Data Model | 5d | 2014-07-24 A | 2014-07-31 | 164 | 40% | 0.56d | start no earlier than 2014-07-24 |
| 168 |  | Integration of Final UI from Prototypes | 3d | 2014-07-31 A | 2014-08-05 | 167 | 19% | 11.76d | start no earlier than 2014-07-31 |
| 169 |  | Development of Module | 25d | 2014-08-05 A | 2014-09-09 | 168 | 47% | 25.59d | start no earlier than 2014-08-05 |
| 170 |  | Functional Testing of Module | 5d | 2014-09-09 | 2014-09-16 | 169 |  | 25.59d | start no earlier than 2014-09-09 |
| 171 |  | Bug Fixing & Stabilize code for 3rd Party Components & Integrations | 3d | 2014-09-16 | 2014-09-19 | 170 |  | 25.59d | start no earlier than 2014-09-16 |
| 172 | 2.7.11 | **Open API to third party developers** | 5d | 2014-07-25 | 2014-07-31 |  |  | 0.43d |  |
| 173 |  | Open API to third party developers | 4d | 2014-07-25 | 2014-07-30 | 164 |  | 0.29d | start no earlier than 2014-07-24 |
| 174 |  | Unit & Integration Testing | 1d | 2014-07-31 | 2014-07-31 | 173 |  | 0.29d | start no earlier than 2014-07-30 |
| 175 | 2.8 | **Module Level Integration & Integration Unit Testing** | 10.59d | 2014-07-31 A | 2014-08-14 |  | 12% | 0d |  |
| 176 |  | Module Level Integration | 5.59d | 2014-07-31 A | 2014-08-07 | 174 | 23% | 0d | start no earlier than 2014-07-31 |
| 177 |  | Integration Unit Testing and Bug Fixing | 4d | 2014-08-07 | 2014-08-13 | 176 |  | 0d | start no earlier than 2014-08-07 |
| 178 |  | Build Stabilization & Readyness | 1d | 2014-08-13 | 2014-08-14 | 177 |  | 0d | start no earlier than 2014-08-13 |
| 179 | 3 | **Testing Phase** | 188d | 2014-01-03 A | 2014-09-24 |  | 15% | 22.59d |  |
| 180 | 3.1 | **Infrastructure Needs** | 5d | 2014-01-19 A | 2014-01-25 A |  | 100% |  |  |
| 181 |  | Acquire needed applications and tools | 2.12d | 2014-01-19 A | 2014-01-22 A |  | 100% |  | start no earlier than 2014-01-19 |
| 182 |  | Setup Testing Environment | 1.88d | 2014-01-23 A | 2014-01-24 A |  | 100% |  | start no earlier than 2014-01-23 |
| 183 |  | Setup Test Database | 0d | 2014-01-25 A | 2014-01-25 A |  | 100% |  | start no earlier than 2014-01-25 |
| 184 | 3.2 | **Project Reporting Processes** | 2d | 2014-01-03 A | 2014-01-07 A |  | 100% |  |  |
| 185 |  | Bug Reporting Process Documents | 1d | 2014-01-03 A | 2014-01-06 A |  | 100% |  | start no earlier than 2014-01-03 |
| 186 |  | Bug Status Tracking Process and Tools Set-up | 1d | 2014-01-06 A | 2014-01-07 A | 185 | 100% |  | start no earlier than 2014-01-06 |
| 187 | 3.3 | **Integration Testing** | 10d | 2014-07-31 A | 2014-08-14 |  | 6% | 0.2d |  |
| 188 |  | Identify Integration Testing Guidelines & Checklist | 1d | 2014-07-31 A | 2014-08-01 |  | 13% | 0.44d | start no earlier than 2014-07-31 |
| 189 |  | Integration Testing & Bug Fixing | 8d | 2014-08-01 A | 2014-08-13 | 188 | 6% | 0.2d | start no earlier than 2014-08-01 |
| 190 |  | Publish Integration Testing Results for Final UAT | 1d | 2014-08-13 | 2014-08-14 | 189 |  | 0.2d | start no earlier than 2014-08-13 |
| 191 | 3.4 | **UI Interface Testing** | 6d | 2014-08-14 A | 2014-08-22 |  | 8% | 0.17d |  |
| 192 |  | Identify UI Interfacing Testing Guidelines & Checklist | 1d | 2014-08-14 A | 2014-08-15 | 190 | 20% | 0.29d | start no earlier than 2014-08-14 |
| 193 |  | UI Testing & Bug Fixing | 4d | 2014-08-15 A | 2014-08-21 | 192 | 7% | 0.17d | start no earlier than 2014-08-15 |
| 194 |  | Publish UI Testing Results for Final UAT | 1d | 2014-08-21 | 2014-08-22 | 193 |  | 0.17d | start no earlier than 2014-08-21 |
| 195 | 3.5 | **Cross Browser Testing** | 8d | 2014-08-14 A | 2014-08-26 |  | 8% | 43.59d |  |
| 196 |  | Identify Browser Compatibillity Testing Guidelines & Checklist | 2d | 2014-08-14 A | 2014-08-18 | 190 | 11% | 0.38d | start no earlier than 2014-08-14 |
| 197 |  | Cross Browser Testing & Bug Fixing | 5d | 2014-08-18 A | 2014-08-25 | 196 | 8% | 43.59d | start no earlier than 2014-08-18 |
| 198 |  | Publish Cross Browser Testing Results for Final UAT | 1d | 2014-08-25 | 2014-08-26 | 197 |  | 43.59d | start no earlier than 2014-08-25 |
| 199 | 3.6 | **Database design Testing** | 10d | 2014-08-22 A | 2014-09-05 |  | 9% | 0.5d |  |
| 200 |  | Identify Database Testing Guidelines & Checklist | 1d | 2014-08-22 A | 2014-08-25 | 194 | 17% | 0.5d | start no earlier than 2014-08-22 |
| 201 |  | Create DB Test Scripts & Test Cases | 4d | 2014-08-25 A | 2014-08-29 | 200 | 13% | 0.27d | start no earlier than 2014-08-25 |
| 202 |  | Database Testing & Bug Fixing | 4d | 2014-08-29 A | 2014-09-04 | 201 | 7% | 0.5d | start no earlier than 2014-08-29 |
| 203 |  | Publish Databsae Design Testing Results for Final UAT | 1d | 2014-09-04 | 2014-09-05 | 202 |  | 0.5d | start no earlier than 2014-09-04 |
| 204 | 3.7 | **Security Penetration/Venurability Tests** | 11d | 2014-08-22 A | 2014-09-08 |  | 11% | 34.59d |  |
| 205 |  | Identify Security/Venurability Testing Guidelines & Checklist | 3d | 2014-08-22 A | 2014-08-27 | 194 | 20% | 42.59d | start no earlier than 2014-08-22 |
| 206 |  | Set-up Tools and Required Performance load environments | 3d | 2014-08-25 A | 2014-08-28 | 200 | 20% | 41.59d | start no earlier than 2014-08-25 |
| 207 |  | Security Testing & Bug Fixing | 6d | 2014-08-29 A | 2014-09-08 | 201 | 5% | 0.13d | start no earlier than 2014-08-29 |
| 208 |  | Publish Security Penetration/Venurability Testing Results for Final UAT | 2d | 2014-09-04 | 2014-09-08 | 202 |  | 34.59d | start no earlier than 2014-09-04 |
| 209 | 3.8 | **Performance & Load Testing** | 13d | 2014-09-05 A | 2014-09-24 |  | 12% | 22.59d |  |
| 210 |  | Identify Performance Testing Guidelines & Checklist | 1d | 2014-09-05 A | 2014-09-08 | 203 | 50% | 0.6d | start no earlier than 2014-09-05 |

| ID | WBS | Task | Duration | Start | Finish | Predecessors | Complete | Total float | Constraint |
| --- | --- | --- | --- | --- | --- | --- | --- | --- | --- |
| 211 |  | Configure the environment for performance testing | 3d | 2014-09-08 A | 2014-09-11 | 210 | 20% | 0.4d | start no earlier than 2014-09-08 |
| 212 |  | Performance Testing & Bug Fixing | 8d | 2014-09-11 A | 2014-09-23 | 211 | 5% | 22.59d | start no earlier than 2014-09-11 |
| 213 |  | Publish Performance Testing Results for Final UAT | 1d | 2014-09-23 | 2014-09-24 | 212 |  | 22.59d | start no earlier than 2014-09-23 |
| 214 | 3.9 | **Regression Testing** | 12d | 2014-09-08 A | 2014-09-24 |  | 5% | 22.59d |  |
| 215 |  | Identify Regression Testing Guidelines & Checklist | 1d | 2014-09-08 A | 2014-09-09 | 207 | 13% | 0.5d | start no earlier than 2014-09-08 |
| 216 |  | Regression Testing & Bug Fixing | 10d | 2014-09-09 A | 2014-09-23 | 215 | 5% | 22.59d | start no earlier than 2014-09-09 |
| 217 |  | Publish Regression Testing Results for Final UAT | 1d | 2014-09-23 | 2014-09-24 | 216 |  | 22.59d | start no earlier than 2014-09-23 |
| 218 | 4 | **Product Migration Phase** | 28d | 2014-08-14 | 2014-09-23 |  |  | 0d |  |
| 219 | 4.1 | **Identify and Plan Migration Strategy for Existing Clients - Review** | 10d | 2014-08-14 | 2014-08-28 |  |  | 0d |  |
| 220 |  | Identify the Areas of the Data Required for Migration and their volumes | 2d | 2014-08-14 | 2014-08-18 | 178 |  | 0d | start no earlier than 2014-08-14 |
| 221 |  | Identify the development apporach for migrating data and validate to propose | 4d | 2014-08-18 | 2014-08-22 | 220 |  | 0d | start no earlier than 2014-08-18 |
| 222 |  | Identify BETA Customers & Analyse the customer data Points for Migration | 4d | 2014-08-22 | 2014-08-28 | 221 |  | 0d | start no earlier than 2014-08-22 |
| 223 | 4.2 | **Design and Propose Development Plan of Migration for Approvals** | 18d | 2014-08-28 | 2014-09-23 |  |  | 0d |  |
| 224 |  | Document and Propose the Data Migration Development Approaches and Plan | 1d | 2014-08-28 | 2014-08-29 | 222 |  | 0d | start no earlier than 2014-08-28 |
| 225 |  | Development of Data Migration Services & Validation Scripts | 10d | 2014-08-29 | 2014-09-12 | 224 |  | 0d | start no earlier than 2014-08-29 |
| 226 |  | Unit Testing and Data Import on DEV | 3d | 2014-09-12 | 2014-09-17 | 225 |  | 0d | start no earlier than 2014-09-12 |
| 227 |  | Create Stage DB with Migrated Data for Test - UAT / Sign-off | 4d | 2014-09-17 | 2014-09-23 | 226 |  | 0d | start no earlier than 2014-09-17 |
| 228 | 5 | **Product Deployment Phase** | 23d | 2014-09-23 | 2014-10-24 |  |  | 0d |  |
| 229 | 5.1 | **Deployment Strategy Plan** | 4d | 2014-09-23 | 2014-09-29 |  |  | 19d |  |
| 230 |  | Design & Review Deployment Strategy for Final Client Signoff | 4d | 2014-09-23 | 2014-09-29 | 227 |  | 19d | start no earlier than 2014-09-23 |
| 231 | 5.2 | **Release Readiness Checklist** | 5d | 2014-09-23 | 2014-09-30 |  |  | 0d |  |
| 232 |  | Design and Review to Publish Release Readiness for Client Sign off | 5d | 2014-09-23 | 2014-09-30 | 227 |  | 0d | start no earlier than 2014-09-23 |
| 233 | 5.3 | **Set-up Deployment Infrastructure** | 8d | 2014-09-30 | 2014-10-10 |  |  | 0d |  |
| 234 |  | Identify The Infrastucture Requirements for Procurements | 2d | 2014-09-30 | 2014-10-02 | 232 |  | 0d | start no earlier than 2014-09-30 |
| 235 |  | Get Quotes and Estimates From Providers / Infra Details from Client | 3d | 2014-10-02 | 2014-10-07 | 234 |  | 0d | start no earlier than 2014-10-02 |
| 236 |  | Analyse the Final Deployment Infrasture for GO-LIVE | 3d | 2014-10-07 | 2014-10-10 | 235 |  | 0d | start no earlier than 2014-10-07 |
| 237 | 5.4 | **GO-LIVE** | 10d | 2014-10-10 | 2014-10-24 |  |  | 0d |  |
| 238 |  | Prepare the Deployable Code / DB for GOLIVE | 2d | 2014-10-10 | 2014-10-14 | 236 |  | 0d | start no earlier than 2014-10-10 |
| 239 |  | Environment Set-up for GOLIVE | 1d | 2014-10-14 | 2014-10-15 | 238 |  | 0d | start no earlier than 2014-10-14 |
| 240 |  | Deploy Code on Servers & Configure Initial Settings | 1d | 2014-10-15 | 2014-10-16 | 239 |  | 0d | start no earlier than 2014-10-15 |
| 241 |  | Migration of Identified Clients Data to New Application DB | 1d | 2014-10-16 | 2014-10-17 | 240 |  | 1d | start no earlier than 2014-10-16 |
| 242 |  | Deploy all Schedulars and Services for GOLIVE | 1d | 2014-10-17 | 2014-10-20 | 241 |  | 1d | start no earlier than 2014-10-17 |
| 243 |  | Smoke Test for final GOLIVE Validation | 2d | 2014-10-20 | 2014-10-22 | 242 |  | 1d | start no earlier than 2014-10-20 |
| 244 |  | Publish GOLIVE Notifications | 1d | 2014-10-22 | 2014-10-23 | 243 |  | 1d | start no earlier than 2014-10-22 |
| 245 |  | Moniter and Maintain the Stability of the Build | 6d | 2014-10-16 | 2014-10-24 | 240 |  | 0d | start no earlier than 2014-10-16 |

## Version 2 (data date 2013-10-01, saved 2014-04-18, file SmartTouchCRM V 1.0 - 04182014.mpp)

Note of the change: adding to git

Last finish stays 2014-10-24. Complete tasks 85 → 87.

Changed:

| ID | Task | Start | Finish | Complete | Total float |
| --- | --- | --- | --- | --- | --- |
| 43 | **Product Implementation Phase** |  |  | 39% → 43% |  |
| 55 | **Finalizing Prototypes & Interface Documents - Business Sign-off** |  |  | 93% → 95% |  |
| 65 | 3rd Party & External Components Integrations |  |  | 16% → 53% |  |
| 79 | **QA Test Preparations & Planning** |  |  | 85% → 86% |  |
| 82 | Document Test Cases for Final Signed-off Modules |  |  | 68% → 72% |  |
| 111 | **Functional Development** |  |  | 24% → 33% |  |
| 117 | Bug Fixing & Stabilize code for Contacts |  |  | 70% → 80% |  |
| 118 | **Design & Develop Campaigns Module** |  |  | 47% → 79% |  |
| 119 | Design Review and Finalize Data Model |  | 2014-02-12 A | 70% → 100% | 0.67d → none |
| 120 | Integration of Final UI from Prototypes |  | 2014-02-13 A | 67% → 100% | 0.5d → none |
| 121 | Development of Module |  |  | 56% → 83% | 143.71d → 2.5d |
| 122 | Functional Testing of Module | 2014-03-28 A |  | 0% → 50% | 143.71d → 1d |
| 123 | Bug Fixing & Stabilize code for Campaigns | 2014-04-04 A |  | 0% → 50% |  |
| 148 | **Design & Develop Super Admin - Accounts Management Module** |  |  | 16% → 66% |  |
| 149 | Design Review and Finalize Data Model |  |  | 25% → 88% | 0.2d → 0.75d |
| 150 | Integration of Final UI from Prototypes |  |  | 20% → 75% | 2.5d → 10d |
| 151 | Development of Module |  |  | 17% → 67% | 91.71d → 0.4d |
| 152 | Functional Testing of Module | 2014-05-27 A |  | 0% → 40% | 91.71d → 0.28d |
| 153 | Bug Fixing & Stabilize code for Super Admin - Accounts Management | 2014-05-28 A |  | 0% → 28% |  |
| 166 | **Design & Develop 3rd Party Components and Integrations** |  |  | 35% → 48% |  |
| 169 | Development of Module |  |  | 47% → 65% | 25.59d → 0.56d |
| 170 | Functional Testing of Module | 2014-09-09 A |  | 0% → 11% | 25.59d → 0.21d |
| 171 | Bug Fixing & Stabilize code for 3rd Party Components & Integrations | 2014-09-16 A |  | 0% → 7% |  |
| 175 | **Module Level Integration & Integration Unit Testing** |  |  | 12% → 18% |  |
| 177 | Integration Unit Testing and Bug Fixing | 2014-08-07 A |  | 0% → 11% | 0d → 0.13d |
| 178 | Build Stabilization & Readyness | 2014-08-13 A |  | 0% → 13% |  |

## Version 3 (data date 2013-10-01, saved 2014-04-25, file SmartTouchCRM V 1.0 - 04252014.mpp)

Note of the change: adding to git

Last finish stays 2014-10-24.

Changed:

| ID | Task | Start | Complete | Total float |
| --- | --- | --- | --- | --- |
| 43 | **Product Implementation Phase** |  | 43% → 44% |  |
| 111 | **Functional Development** |  | 33% → 37% |  |
| 136 | **Design & Develop Personal Settings Module** | 2014-04-08 A | 0% → 19% | 1.75d → 124.71d |
| 137 | Design Review and Finalize Data Model | 2014-04-08 A | 0% → 67% | 1.25d → 0.53d |
| 138 | Integration of Final UI from Prototypes | 2014-04-10 A | 0% → 53% | 1.25d → 1.67d |
| 139 | Development of Module | 2014-04-11 A | 0% → 17% | 1.25d → 0d |
| 142 | **Design & Develop Account Admin Settings Module** |  | 17% → 39% |  |
| 143 | Design Review and Finalize Data Model |  | 25% → 75% | 0.33d → 0.5d |
| 144 | Integration of Final UI from Prototypes |  | 33% → 50% | 4.69d → 10.94d |
| 145 | Development of Module |  | 19% → 44% | 0.4d → 0d |

## Version 4 (data date 2013-10-01, saved 2014-05-02, file SmartTouchCRM V 1.0 - 05022014.mpp)

Note of the change: adding to git

Last finish stays 2014-10-24.

Changed:

| ID | Task | Start | Complete | Total float |
| --- | --- | --- | --- | --- |
| 43 | **Product Implementation Phase** |  | 44% → 45% |  |
| 111 | **Functional Development** |  | 37% → 40% |  |
| 118 | **Design & Develop Campaigns Module** |  | 79% → 83% |  |
| 122 | Functional Testing of Module |  | 50% → 75% | 1d → 1.33d |
| 123 | Bug Fixing & Stabilize code for Campaigns |  | 50% → 67% |  |
| 130 | **Design & Develop Internet Forms/Lead Captures Module** | 2014-04-03 A | 0% → 22% | 1.33d → 122.71d |
| 131 | Design Review and Finalize Data Model | 2014-04-03 A | 0% → 67% |  |
| 132 | Integration of Final UI from Prototypes | 2014-04-07 A | 0% → 50% | 0.5d → 1.33d |
| 133 | Development of Module | 2014-04-08 A | 0% → 24% | 0.5d → 1.5d |
| 136 | **Design & Develop Personal Settings Module** |  | 19% → 25% |  |
| 139 | Development of Module |  | 17% → 29% | 0d → 1.25d |
| 142 | **Design & Develop Account Admin Settings Module** |  | 39% → 44% |  |
| 145 | Development of Module |  | 44% → 50% |  |

## Version 5 (data date 2013-10-01, saved 2014-05-09, file SmartTouchCRM V 1.0 - 05092014.mpp)

Note of the change: adding to git

Last finish stays 2014-10-24. Complete tasks 87 → 88.

Changed:

| ID | Task | Start | Finish | Complete | Total float |
| --- | --- | --- | --- | --- | --- |
| 111 | **Functional Development** |  |  | 40% → 41% |  |
| 118 | **Design & Develop Campaigns Module** |  |  | 83% → 87% |  |
| 121 | Development of Module |  |  | 83% → 89% | 2.5d → 3.75d |
| 130 | **Design & Develop Internet Forms/Lead Captures Module** |  |  | 22% → 24% |  |
| 131 | Design Review and Finalize Data Model |  |  | 67% → 80% | 0.5d → 0.7d |
| 132 | Integration of Final UI from Prototypes |  |  | 50% → 70% |  |
| 136 | **Design & Develop Personal Settings Module** |  |  | 25% → 32% |  |
| 140 | Functional Testing of Module | 2014-04-25 A |  | 0% → 20% | 1.25d → 0.5d |
| 141 | Bug Fixing & Stabilize code for Personal Settings | 2014-05-01 A |  | 0% → 25% |  |
| 142 | **Design & Develop Account Admin Settings Module** |  |  | 44% → 46% |  |
| 144 | Integration of Final UI from Prototypes |  |  | 50% → 83% |  |
| 147 | Bug Fixing & Stabilize code for Account Admin Settings | 2014-06-18 A |  | 0% → 17% |  |
| 179 | **Testing Phase** |  |  | 15% → 20% |  |
| 187 | **Integration Testing** |  |  | 6% → 8% | 0.2d → 0.4d |
| 188 | Identify Integration Testing Guidelines & Checklist |  |  | 13% → 38% |  |
| 191 | **UI Interface Testing** |  |  | 8% → 11% |  |
| 192 | Identify UI Interfacing Testing Guidelines & Checklist |  |  | 20% → 40% |  |
| 195 | **Cross Browser Testing** |  |  | 8% → 13% |  |
| 196 | Identify Browser Compatibillity Testing Guidelines & Checklist |  |  | 11% → 33% | 0.38d → 0d |
| 209 | **Performance & Load Testing** |  |  | 12% → 22% |  |
| 210 | Identify Performance Testing Guidelines & Checklist |  | 2014-09-08 A | 50% → 100% | 0.6d → none |
| 212 | Performance Testing & Bug Fixing |  |  | 5% → 15% |  |
| 214 | **Regression Testing** |  |  | 5% → 15% |  |
| 215 | Identify Regression Testing Guidelines & Checklist |  |  | 13% → 33% | 0.5d → 1d |
| 216 | Regression Testing & Bug Fixing |  |  | 5% → 15% |  |
| 218 | **Product Migration Phase** | 2014-08-14 A |  | 0% → 1% |  |
| 219 | **Identify and Plan Migration Strategy for Existing Clients - Review** | 2014-08-14 A |  | 0% → 3% |  |
| 220 | Identify the Areas of the Data Required for Migration and their volumes | 2014-08-14 A |  | 0% → 13% |  |

## Version 6 (data date 2013-10-01, saved 2014-05-16, file SmartTouchCRM V 1.0 - 05162014.mpp)

Note of the change: adding to git

Last finish stays 2014-10-24.

Changed:

| ID | Task | Complete | Total float |
| --- | --- | --- | --- |
| 43 | **Product Implementation Phase** | 45% → 47% |  |
| 111 | **Functional Development** | 41% → 44% |  |
| 112 | **Design & Develop Contacts Module** | 95% → 96% |  |
| 115 | Development of Module | 95% → 96% |  |
| 130 | **Design & Develop Internet Forms/Lead Captures Module** | 24% → 32% |  |
| 133 | Development of Module | 24% → 35% | 1.5d → 1.75d |
| 136 | **Design & Develop Personal Settings Module** | 32% → 36% |  |
| 138 | Integration of Final UI from Prototypes | 53% → 67% | 2.86d → 3.57d |
| 139 | Development of Module | 29% → 36% |  |
| 142 | **Design & Develop Account Admin Settings Module** | 46% → 57% |  |
| 143 | Design Review and Finalize Data Model | 75% → 88% |  |
| 145 | Development of Module | 50% → 63% | 0.4d → 0.8d |
| 146 | Functional Testing of Module | 10% → 20% |  |
| 166 | **Design & Develop 3rd Party Components and Integrations** | 48% → 55% |  |
| 167 | Design Review and Finalize Data Model | 40% → 60% | 0.56d → 0.94d |
| 168 | Integration of Final UI from Prototypes | 19% → 31% | 16.18d → 17.65d |
| 169 | Development of Module | 65% → 71% | 0.56d → 0d |
| 179 | **Testing Phase** | 20% → 21% |  |
| 187 | **Integration Testing** | 8% → 13% |  |
| 189 | Integration Testing & Bug Fixing | 6% → 11% | 0.2d → 0.4d |
| 191 | **UI Interface Testing** | 11% → 16% |  |
| 193 | UI Testing & Bug Fixing | 7% → 14% | 0.17d → 0d |

## Version 7 (data date 2013-10-01, saved 2014-05-23, file SmartTouchCRM V 1.0 - 05232014.mpp)

Note of the change: adding to git

Last finish stays 2014-10-24.

Changed:

| ID | Task | Complete | Total float |
| --- | --- | --- | --- |
| 111 | **Functional Development** | 44% → 47% |  |
| 130 | **Design & Develop Internet Forms/Lead Captures Module** | 32% → 46% |  |
| 133 | Development of Module | 35% → 59% | 1.75d → 0d |
| 136 | **Design & Develop Personal Settings Module** | 36% → 42% |  |
| 139 | Development of Module | 36% → 48% |  |
| 148 | **Design & Develop Super Admin - Accounts Management Module** | 66% → 74% |  |
| 151 | Development of Module | 67% → 78% | 0.4d → 0d |
| 179 | **Testing Phase** | 21% → 24% |  |
| 187 | **Integration Testing** | 13% → 17% |  |
| 189 | Integration Testing & Bug Fixing | 11% → 17% |  |
| 191 | **UI Interface Testing** | 16% → 26% |  |
| 193 | UI Testing & Bug Fixing | 14% → 29% | 0d → 0.17d |
| 195 | **Cross Browser Testing** | 13% → 23% |  |
| 197 | Cross Browser Testing & Bug Fixing | 8% → 23% |  |
| 199 | **Database design Testing** | 9% → 15% | 35.59d → 0.5d |
| 202 | Database Testing & Bug Fixing | 7% → 20% | 34.59d → 0d |
| 204 | **Security Penetration/Venurability Tests** | 11% → 15% |  |
| 207 | Security Testing & Bug Fixing | 5% → 15% | 0.33d → 0d |

## Version 8 (data date 2013-10-01, saved 2014-06-06, file SmartTouchCRM V 1.0 - 05302014.mpp)

Note of the change: adding to git

Last finish stays 2014-10-24.

Changed:

| ID | Task | Start | Complete | Total float |
| --- | --- | --- | --- | --- |
| 43 | **Product Implementation Phase** |  | 47% → 48% |  |
| 111 | **Functional Development** |  | 47% → 49% |  |
| 130 | **Design & Develop Internet Forms/Lead Captures Module** |  | 46% → 59% |  |
| 131 | Design Review and Finalize Data Model |  | 80% → 87% | 0.7d → 0.8d |
| 132 | Integration of Final UI from Prototypes |  | 70% → 80% | 1.33d → 1.6d |
| 133 | Development of Module |  | 59% → 71% | 0d → 0.8d |
| 134 | Functional Testing of Module | 2014-04-29 A | 0% → 20% | 1.5d → 0.29d |
| 135 | Bug Fixing & Stabilize code for Internet Forms / Lead Captures | 2014-05-05 A | 0% → 14% |  |
| 136 | **Design & Develop Personal Settings Module** |  | 42% → 58% |  |
| 137 | Design Review and Finalize Data Model |  | 67% → 87% | 0.67d → 0.8d |
| 138 | Integration of Final UI from Prototypes |  | 67% → 80% | 4.76d → 7.14d |
| 139 | Development of Module |  | 48% → 71% | 0.8d → 0d |
| 172 | **Open API to third party developers** | 2014-07-25 A | 0% → 16% |  |
| 173 | Open API to third party developers | 2014-07-25 A | 0% → 20% |  |
| 179 | **Testing Phase** |  | 24% → 25% |  |
| 199 | **Database design Testing** |  | 15% → 21% | 0.5d → 33.59d |
| 200 | Identify Database Testing Guidelines & Checklist |  | 17% → 33% | 0.5d → 0.6d |
| 201 | Create DB Test Scripts & Test Cases |  | 13% → 25% |  |
| 218 | **Product Migration Phase** |  | 1% → 3% |  |
| 219 | **Identify and Plan Migration Strategy for Existing Clients - Review** |  | 3% → 8% |  |
| 220 | Identify the Areas of the Data Required for Migration and their volumes |  | 13% → 40% |  |

## Version 9 (data date 2013-10-01, saved 2014-06-06, file SmartTouchCRM V 1.0 - 06062014.mpp)

Note of the change: adding to git

Last finish stays 2014-10-24. Complete tasks 88 → 89.

Changed:

| ID | Task | Start | Finish | Duration | Complete | Total float |
| --- | --- | --- | --- | --- | --- | --- |
| 43 | **Product Implementation Phase** |  |  |  | 48% → 49% |  |
| 111 | **Functional Development** |  |  |  | 49% → 52% |  |
| 130 | **Design & Develop Internet Forms/Lead Captures Module** |  |  |  | 59% → 65% |  |
| 131 | Design Review and Finalize Data Model |  |  |  | 87% → 93% | 0.8d → 144.71d |
| 132 | Integration of Final UI from Prototypes |  | 2014-04-07 → 2014-04-08 A (+1d) | 1d → 1.62d | 80% → 100% | 1.6d → none |
| 134 | Functional Testing of Module |  |  |  | 20% → 40% | 0.29d → 0.43d |
| 135 | Bug Fixing & Stabilize code for Internet Forms / Lead Captures |  |  |  | 14% → 21% |  |
| 136 | **Design & Develop Personal Settings Module** |  |  |  | 58% → 61% |  |
| 138 | Integration of Final UI from Prototypes |  |  |  | 80% → 87% | 7.14d → 7.62d |
| 139 | Development of Module |  |  |  | 71% → 76% | 0d → 0.8d |
| 142 | **Design & Develop Account Admin Settings Module** |  |  |  | 57% → 68% |  |
| 145 | Development of Module |  |  |  | 63% → 75% | 0.8d → 1d |
| 146 | Functional Testing of Module |  |  |  | 20% → 25% | 0.33d → 0.67d |
| 147 | Bug Fixing & Stabilize code for Account Admin Settings |  |  |  | 17% → 33% |  |
| 166 | **Design & Develop 3rd Party Components and Integrations** |  |  |  | 55% → 60% |  |
| 168 | Integration of Final UI from Prototypes |  |  |  | 31% → 38% | 17.65d → 19.12d |
| 169 | Development of Module |  |  |  | 71% → 76% | 0.56d → 1.11d |
| 170 | Functional Testing of Module |  |  |  | 11% → 22% | 0.21d → 0.43d |
| 171 | Bug Fixing & Stabilize code for 3rd Party Components & Integrations |  |  |  | 7% → 14% |  |
| 179 | **Testing Phase** |  |  |  | 25% → 26% |  |
| 187 | **Integration Testing** |  |  |  | 17% → 23% |  |
| 189 | Integration Testing & Bug Fixing |  |  |  | 17% → 22% | 0.4d → 0.17d |
| 190 | Publish Integration Testing Results for Final UAT | 2014-08-13 A |  |  | 0% → 17% |  |
| 191 | **UI Interface Testing** |  |  |  | 26% → 31% |  |
| 193 | UI Testing & Bug Fixing |  |  |  | 29% → 32% |  |
| 194 | Publish UI Testing Results for Final UAT | 2014-08-21 A |  |  | 0% → 17% | 0.17d → 0.33d |

## Version 10 (data date 2013-10-01, saved 2014-06-16, file SmartTouchCRM V 1.0 - 06132014.mpp)

Note of the change: adding to git

Last finish stays 2014-10-24.

Changed:

| ID | Task | Start | Complete | Total float |
| --- | --- | --- | --- | --- |
| 111 | **Functional Development** |  | 52% → 53% |  |
| 130 | **Design & Develop Internet Forms/Lead Captures Module** |  | 65% → 66% |  |
| 135 | Bug Fixing & Stabilize code for Internet Forms / Lead Captures |  | 21% → 29% |  |
| 136 | **Design & Develop Personal Settings Module** |  | 61% → 66% |  |
| 140 | Functional Testing of Module |  | 20% → 40% | 0.5d → 0.75d |
| 141 | Bug Fixing & Stabilize code for Personal Settings |  | 25% → 38% |  |
| 142 | **Design & Develop Account Admin Settings Module** |  | 68% → 71% |  |
| 146 | Functional Testing of Module |  | 25% → 50% | 0.67d → 0.8d |
| 147 | Bug Fixing & Stabilize code for Account Admin Settings |  | 33% → 42% |  |
| 148 | **Design & Develop Super Admin - Accounts Management Module** |  | 74% → 79% |  |
| 151 | Development of Module |  | 78% → 83% | 0.4d → 0d |
| 152 | Functional Testing of Module |  | 40% → 50% | 0.28d → 0.33d |
| 153 | Bug Fixing & Stabilize code for Super Admin - Accounts Management |  | 28% → 33% |  |
| 166 | **Design & Develop 3rd Party Components and Integrations** |  | 60% → 65% |  |
| 167 | Design Review and Finalize Data Model |  | 60% → 68% | 1.12d → 1.41d |
| 168 | Integration of Final UI from Prototypes |  | 38% → 47% |  |
| 170 | Functional Testing of Module |  | 22% → 33% | 0.43d → 0.86d |
| 171 | Bug Fixing & Stabilize code for 3rd Party Components & Integrations |  | 14% → 29% |  |
| 172 | **Open API to third party developers** |  | 16% → 19% |  |
| 174 | Unit & Integration Testing | 2014-07-31 A | 0% → 13% |  |
| 179 | **Testing Phase** |  | 26% → 31% |  |
| 187 | **Integration Testing** |  | 23% → 28% |  |
| 189 | Integration Testing & Bug Fixing |  | 22% → 28% |  |
| 191 | **UI Interface Testing** |  | 31% → 36% |  |
| 193 | UI Testing & Bug Fixing |  | 32% → 39% |  |
| 195 | **Cross Browser Testing** |  | 23% → 30% |  |
| 197 | Cross Browser Testing & Bug Fixing |  | 23% → 31% | 43.59d → 0d |
| 198 | Publish Cross Browser Testing Results for Final UAT | 2014-08-25 A | 0% → 17% |  |
| 199 | **Database design Testing** |  | 21% → 29% | 33.59d → 35.59d |
| 201 | Create DB Test Scripts & Test Cases |  | 25% → 38% | 0.8d → 0.9d |
| 202 | Database Testing & Bug Fixing |  | 20% → 27% | 34.59d → 0.5d |
| 204 | **Security Penetration/Venurability Tests** |  | 15% → 17% |  |
| 207 | Security Testing & Bug Fixing |  | 15% → 20% |  |
| 209 | **Performance & Load Testing** |  | 22% → 29% |  |
| 211 | Configure the environment for performance testing |  | 20% → 40% | 1.2d → 1.6d |
| 212 | Performance Testing & Bug Fixing |  | 15% → 20% |  |

## Version 11 (data date 2013-10-01, saved 2014-06-20, file SmartTouchCRM V 1.0 - 06202014.mpp)

Note of the change: adding to git

Last finish stays 2014-10-24. Complete tasks 89 → 93.

Changed:

| ID | Task | Finish | Complete | Total float |
| --- | --- | --- | --- | --- |
| 43 | **Product Implementation Phase** |  | 49% → 50% |  |
| 111 | **Functional Development** |  | 53% → 55% |  |
| 130 | **Design & Develop Internet Forms/Lead Captures Module** |  | 66% → 72% |  |
| 131 | Design Review and Finalize Data Model | 2014-04-04 A | 93% → 100% | 144.71d → none |
| 133 | Development of Module |  | 71% → 76% | 1.6d → 2d |
| 134 | Functional Testing of Module |  | 40% → 50% | 0.43d → 0.71d |
| 135 | Bug Fixing & Stabilize code for Internet Forms / Lead Captures |  | 29% → 36% |  |
| 142 | **Design & Develop Account Admin Settings Module** |  | 71% → 73% |  |
| 143 | Design Review and Finalize Data Model | 2014-05-06 A | 88% → 100% | 0.83d → none |
| 144 | Integration of Final UI from Prototypes | 2014-05-07 A | 83% → 100% | 18.75d → none |
| 147 | Bug Fixing & Stabilize code for Account Admin Settings |  | 42% → 58% |  |
| 148 | **Design & Develop Super Admin - Accounts Management Module** |  | 79% → 82% |  |
| 149 | Design Review and Finalize Data Model | 2014-05-02 A | 88% → 100% | 0.75d → none |
| 150 | Integration of Final UI from Prototypes |  | 75% → 90% |  |
| 153 | Bug Fixing & Stabilize code for Super Admin - Accounts Management |  | 33% → 44% |  |
| 166 | **Design & Develop 3rd Party Components and Integrations** |  | 65% → 66% |  |
| 170 | Functional Testing of Module |  | 33% → 44% | 0.86d → 1.07d |
| 171 | Bug Fixing & Stabilize code for 3rd Party Components & Integrations |  | 29% → 36% |  |
| 172 | **Open API to third party developers** |  | 19% → 23% | 0.43d → 0.71d |
| 174 | Unit & Integration Testing |  | 13% → 33% |  |
| 175 | **Module Level Integration & Integration Unit Testing** |  | 18% → 25% | 0.8d → 0.27d |
| 176 | Module Level Integration |  | 23% → 28% | 0.44d → 0.89d |
| 177 | Integration Unit Testing and Bug Fixing |  | 11% → 22% | 0.13d → 0d |
| 179 | **Testing Phase** |  | 31% → 34% |  |
| 187 | **Integration Testing** |  | 28% → 37% |  |
| 189 | Integration Testing & Bug Fixing |  | 28% → 39% |  |
| 191 | **UI Interface Testing** |  | 36% → 40% |  |
| 193 | UI Testing & Bug Fixing |  | 39% → 46% |  |
| 195 | **Cross Browser Testing** |  | 30% → 39% |  |
| 197 | Cross Browser Testing & Bug Fixing |  | 31% → 46% |  |
| 199 | **Database design Testing** |  | 29% → 34% | 35.59d → 0.5d |
| 201 | Create DB Test Scripts & Test Cases |  | 38% → 50% | 0.9d → 1.07d |

## Version 12 (data date 2013-10-01, saved 2014-06-27, file SmartTouchCRM V 1.0 - 06272014.mpp)

Note of the change: adding to git

Last finish stays 2014-10-24. Complete tasks 93 → 96.

Changed:

| ID | Task | Finish | Complete | Total float |
| --- | --- | --- | --- | --- |
| 43 | **Product Implementation Phase** |  | 50% → 51% |  |
| 111 | **Functional Development** |  | 55% → 57% |  |
| 118 | **Design & Develop Campaigns Module** |  | 87% → 91% |  |
| 121 | Development of Module |  | 89% → 94% |  |
| 130 | **Design & Develop Internet Forms/Lead Captures Module** |  | 72% → 80% |  |
| 133 | Development of Module |  | 76% → 82% | 2d → 3d |
| 134 | Functional Testing of Module |  | 50% → 75% |  |
| 136 | **Design & Develop Personal Settings Module** |  | 66% → 72% |  |
| 137 | Design Review and Finalize Data Model | 2014-04-09 A | 87% → 100% | 0.87d → none |
| 138 | Integration of Final UI from Prototypes | 2014-04-10 A | 87% → 100% | 7.62d → none |
| 140 | Functional Testing of Module |  | 40% → 60% |  |
| 148 | **Design & Develop Super Admin - Accounts Management Module** |  | 82% → 86% |  |
| 150 | Integration of Final UI from Prototypes | 2014-05-05 A | 90% → 100% | 12.5d → none |
| 151 | Development of Module |  | 83% → 89% | 0.5d → 0d |
| 166 | **Design & Develop 3rd Party Components and Integrations** |  | 66% → 69% |  |
| 168 | Integration of Final UI from Prototypes |  | 47% → 63% |  |
| 170 | Functional Testing of Module |  | 44% → 56% |  |
| 172 | **Open API to third party developers** |  | 23% → 39% | 0.71d → 1.14d |
| 173 | Open API to third party developers |  | 20% → 40% | 0.13d → 0.33d |
| 175 | **Module Level Integration & Integration Unit Testing** |  | 25% → 31% |  |
| 176 | Module Level Integration |  | 28% → 36% | 0.89d → 1.11d |
| 177 | Integration Unit Testing and Bug Fixing |  | 22% → 28% |  |
| 179 | **Testing Phase** |  | 34% → 35% |  |
| 187 | **Integration Testing** |  | 37% → 41% | 0.4d → 0.6d |
| 189 | Integration Testing & Bug Fixing |  | 39% → 44% |  |
| 191 | **UI Interface Testing** |  | 40% → 44% |  |
| 192 | Identify UI Interfacing Testing Guidelines & Checklist |  | 40% → 60% |  |

## Version 13 (data date 2013-10-01, saved 2014-07-07, file SmartTouchCRM V 1.0 - 07042014.mpp)

Note of the change: adding to git

Last finish stays 2014-10-24. Complete tasks 96 → 101.

Changed:

| ID | Task | Finish | Complete | Total float |
| --- | --- | --- | --- | --- |
| 43 | **Product Implementation Phase** |  | 51% → 52% |  |
| 44 | **Design / Review Module Moqups** | 2013-12-18 A | 97% → 100% | 222.59d → none |
| 53 | Reports | 2013-12-13 A | 91% → 100% | 225.46d → none |
| 54 | 3rd Party & External Components Integrations | 2013-12-18 A | 60% → 100% | 222.59d → none |
| 55 | **Finalizing Prototypes & Interface Documents - Business Sign-off** | 2014-01-07 A | 95% → 100% | 207.87d → none |
| 64 | Reports | 2014-01-03 A | 83% → 100% | 0.6d → none |
| 65 | 3rd Party & External Components Integrations | 2014-01-07 A | 53% → 100% | 207.87d → none |
| 79 | **QA Test Preparations & Planning** |  | 86% → 91% |  |
| 82 | Document Test Cases for Final Signed-off Modules |  | 72% → 80% |  |
| 83 | Review and Finalize Test Cases |  | 22% → 59% |  |
| 86 | **Application Designing & Development Preparation** |  | 97% → 98% |  |
| 93 | **Web UI Application Design Practices** | 2013-12-31 A | 98% → 100% | 213.59d → none |
| 96 | Kendo UI - Framwork Update and Integration | 2013-12-31 A | 95% → 100% | 213.59d → none |
| 111 | **Functional Development** |  | 57% → 58% |  |
| 130 | **Design & Develop Internet Forms/Lead Captures Module** |  | 80% → 81% |  |
| 133 | Development of Module |  | 82% → 88% | 3d → 2d |
| 134 | Functional Testing of Module |  | 75% → 50% |  |
| 135 | Bug Fixing & Stabilize code for Internet Forms / Lead Captures |  | 36% → 54% |  |
| 136 | **Design & Develop Personal Settings Module** |  | 72% → 76% |  |
| 139 | Development of Module |  | 76% → 83% |  |
| 148 | **Design & Develop Super Admin - Accounts Management Module** |  | 86% → 89% |  |
| 151 | Development of Module |  | 89% → 91% | 0d → 0.5d |
| 153 | Bug Fixing & Stabilize code for Super Admin - Accounts Management |  | 44% → 56% |  |
| 166 | **Design & Develop 3rd Party Components and Integrations** |  | 69% → 71% |  |
| 167 | Design Review and Finalize Data Model |  | 68% → 80% | 1.88d → 2.25d |
| 168 | Integration of Final UI from Prototypes |  | 63% → 75% |  |
| 175 | **Module Level Integration & Integration Unit Testing** |  | 31% → 37% | 0.27d → 0.8d |
| 177 | Integration Unit Testing and Bug Fixing |  | 28% → 44% |  |

## Version 14 (data date 2013-10-01, saved 2014-07-11, file SmartTouchCRM V 1.0 - 07112014.mpp)

Note of the change: adding to git

Last finish stays 2014-10-24.

Changed:

| ID | Task | Start | Complete | Total float |
| --- | --- | --- | --- | --- |
| 43 | **Product Implementation Phase** |  | 52% → 53% |  |
| 111 | **Functional Development** |  | 58% → 61% |  |
| 118 | **Design & Develop Campaigns Module** |  | 91% → 92% |  |
| 123 | Bug Fixing & Stabilize code for Campaigns |  | 67% → 83% |  |
| 130 | **Design & Develop Internet Forms/Lead Captures Module** |  | 81% → 87% |  |
| 133 | Development of Module |  | 88% → 91% | 2d → 2.8d |
| 134 | Functional Testing of Module |  | 50% → 70% | 0.71d → 1.43d |
| 135 | Bug Fixing & Stabilize code for Internet Forms / Lead Captures |  | 54% → 71% |  |
| 136 | **Design & Develop Personal Settings Module** |  | 76% → 84% |  |
| 139 | Development of Module |  | 83% → 89% | 2.4d → 2.72d |
| 140 | Functional Testing of Module |  | 60% → 68% | 0.75d → 1.25d |
| 141 | Bug Fixing & Stabilize code for Personal Settings |  | 38% → 63% |  |
| 142 | **Design & Develop Account Admin Settings Module** |  | 73% → 84% |  |
| 145 | Development of Module |  | 75% → 88% | 2d → 2.4d |
| 146 | Functional Testing of Module |  | 50% → 60% | 1.17d → 1.33d |
| 147 | Bug Fixing & Stabilize code for Account Admin Settings |  | 58% → 67% |  |
| 154 | **Design & Develop Account Dashboard Module** | 2014-05-28 A | 0% → 1% |  |
| 156 | Integration of Final UI from Prototypes | 2014-05-30 A | 0% → 13% |  |
| 160 | **Design & Develop Account Reports Module** | 2014-06-18 A | 0% → 1% | 1.6d → 63.71d |
| 162 | Integration of Final UI from Prototypes | 2014-06-20 A | 0% → 25% |  |
| 166 | **Design & Develop 3rd Party Components and Integrations** |  | 71% → 74% |  |
| 168 | Integration of Final UI from Prototypes |  | 75% → 81% | 19.12d → 20d |
| 169 | Development of Module |  | 76% → 80% |  |
| 175 | **Module Level Integration & Integration Unit Testing** |  | 37% → 40% |  |
| 176 | Module Level Integration |  | 36% → 42% |  |

## Version 15 (data date 2013-10-01, saved 2014-08-01, file SmartTouchCRM V 1.0 - 07252014.mpp)

Note of the change: adding to git

Last finish stays 2014-10-24.

Changed:

| ID | Task | Start | Complete | Total float |
| --- | --- | --- | --- | --- |
| 43 | **Product Implementation Phase** |  | 53% → 54% |  |
| 79 | **QA Test Preparations & Planning** |  | 91% → 93% |  |
| 82 | Document Test Cases for Final Signed-off Modules |  | 80% → 84% |  |
| 83 | Review and Finalize Test Cases |  | 59% → 74% |  |
| 111 | **Functional Development** |  | 61% → 63% |  |
| 112 | **Design & Develop Contacts Module** |  | 96% → 97% |  |
| 115 | Development of Module |  | 96% → 98% |  |
| 118 | **Design & Develop Campaigns Module** |  | 92% → 95% |  |
| 121 | Development of Module |  | 94% → 97% | 3.75d → 4.25d |
| 122 | Functional Testing of Module |  | 75% → 85% | 1.67d → 1.75d |
| 123 | Bug Fixing & Stabilize code for Campaigns |  | 83% → 88% |  |
| 130 | **Design & Develop Internet Forms/Lead Captures Module** |  | 87% → 94% |  |
| 133 | Development of Module |  | 91% → 95% | 2.8d → 3.4d |
| 134 | Functional Testing of Module |  | 70% → 85% | 1.43d → 1.71d |
| 135 | Bug Fixing & Stabilize code for Internet Forms / Lead Captures |  | 71% → 86% |  |
| 136 | **Design & Develop Personal Settings Module** |  | 84% → 87% |  |
| 139 | Development of Module |  | 89% → 90% | 2.72d → 3.04d |
| 140 | Functional Testing of Module |  | 68% → 76% | 1.25d → 1.5d |
| 141 | Bug Fixing & Stabilize code for Personal Settings |  | 63% → 75% |  |
| 142 | **Design & Develop Account Admin Settings Module** |  | 84% → 89% |  |
| 145 | Development of Module |  | 88% → 93% | 2.4d → 2.8d |
| 146 | Functional Testing of Module |  | 60% → 70% | 1.33d → 0.5d |
| 148 | **Design & Develop Super Admin - Accounts Management Module** |  | 89% → 90% |  |
| 152 | Functional Testing of Module |  | 50% → 60% | 0.56d → 0.2d |
| 153 | Bug Fixing & Stabilize code for Super Admin - Accounts Management |  | 56% → 67% |  |
| 154 | **Design & Develop Account Dashboard Module** |  | 1% → 2% |  |
| 155 | Design Review and Finalize Data Model | 2014-05-28 A | 0% → 10% | 0.13d → 0d |
| 160 | **Design & Develop Account Reports Module** |  | 1% → 3% |  |
| 161 | Design Review and Finalize Data Model | 2014-06-18 A | 0% → 25% | 0.25d → 0d |

## Version 16 (data date 2013-10-01, saved 2014-08-01, file SmartTouchCRM V 1.0 - 08012014.mpp)

Note of the change: adding to git

Last finish stays 2014-10-24.

Changed:

| ID | Task | Start | Complete | Total float |
| --- | --- | --- | --- | --- |
| 43 | **Product Implementation Phase** |  | 54% → 55% |  |
| 111 | **Functional Development** |  | 63% → 64% |  |
| 136 | **Design & Develop Personal Settings Module** |  | 87% → 89% |  |
| 139 | Development of Module |  | 90% → 93% |  |
| 141 | Bug Fixing & Stabilize code for Personal Settings |  | 75% → 81% |  |
| 142 | **Design & Develop Account Admin Settings Module** |  | 89% → 91% |  |
| 146 | Functional Testing of Module |  | 70% → 80% |  |
| 147 | Bug Fixing & Stabilize code for Account Admin Settings |  | 67% → 75% |  |
| 152 | Functional Testing of Module |  | 60% → 70% |  |
| 153 | Bug Fixing & Stabilize code for Super Admin - Accounts Management |  | 67% → 72% |  |
| 154 | **Design & Develop Account Dashboard Module** |  | 2% → 5% |  |
| 157 | Development of Module | 2014-06-02 A | 0% → 7% |  |
| 160 | **Design & Develop Account Reports Module** |  | 3% → 6% |  |
| 163 | Development of Module | 2014-06-23 A | 0% → 6% | 1.6d → 2.4d |
| 166 | **Design & Develop 3rd Party Components and Integrations** |  | 74% → 75% |  |
| 171 | Bug Fixing & Stabilize code for 3rd Party Components & Integrations |  | 36% → 57% |  |
| 172 | **Open API to third party developers** |  | 39% → 61% | 1.5d → 1.86d |
| 173 | Open API to third party developers |  | 40% → 60% | 0.33d → 0.67d |
| 174 | Unit & Integration Testing |  | 33% → 67% | 1.14d → 1.86d |
| 175 | **Module Level Integration & Integration Unit Testing** |  | 40% → 50% |  |
| 176 | Module Level Integration |  | 42% → 49% | 1.78d → 2.22d |
| 177 | Integration Unit Testing and Bug Fixing |  | 44% → 56% | 0d → 0.33d |
| 178 | Build Stabilization & Readyness |  | 13% → 33% |  |
| 179 | **Testing Phase** |  | 35% → 38% |  |
| 191 | **UI Interface Testing** |  | 44% → 48% |  |
| 193 | UI Testing & Bug Fixing |  | 46% → 54% | 0.17d → 0d |
| 199 | **Database design Testing** |  | 34% → 39% |  |
| 201 | Create DB Test Scripts & Test Cases |  | 50% → 63% |  |
| 204 | **Security Penetration/Venurability Tests** |  | 17% → 19% |  |
| 207 | Security Testing & Bug Fixing |  | 20% → 25% |  |
| 209 | **Performance & Load Testing** |  | 29% → 32% |  |
| 212 | Performance Testing & Bug Fixing |  | 20% → 25% |  |
| 214 | **Regression Testing** |  | 15% → 24% |  |
| 216 | Regression Testing & Bug Fixing |  | 15% → 25% |  |

## Version 17 (data date 2013-10-01, saved 2014-09-12, file SmartTouchCRM V 2.005092014.mpp)

Note of the change: adding to git

Last finish 2014-10-24 → 2015-05-29 (+217d). Complete tasks 101 → 122.

Added:

| ID | Task | Duration | Start | Finish | Predecessors | Constraint |
| --- | --- | --- | --- | --- | --- | --- |
| 107 | Change Requests and Enhancements | 10d | 2014-06-30 A | 2014-07-11 |  | finish no earlier than 2014-07-11 |
| 117 | Change Requests and Enhancements | 50d | 2014-06-30 A | 2014-09-05 |  | finish no earlier than 2014-09-05 |
| 124 | Change Requests and Enhancements | 49.88d | 2014-06-30 A | 2014-09-05 |  | finish no earlier than 2014-09-05 |
| 125 | Email Preferances - Updates and Changes | 10d | 2014-08-19 A | 2014-09-02 |  | start no earlier than 2014-08-19 |
| 132 | Change Requests and Enhancements | 40d | 2014-06-30 A | 2014-08-22 |  | finish no earlier than 2014-08-22 |
| 139 | Change Requests and Enhancements | 40d | 2014-06-30 A | 2014-08-22 |  | finish no earlier than 2014-08-22 |
| 146 | Change Requests and Enhancements | 45d | 2014-06-30 A | 2014-08-29 |  | finish no earlier than 2014-08-29 |
| 153 | Change Requests and Enhancements | 10d | 2014-08-18 | 2014-08-29 |  | finish no earlier than 2014-08-29 |
| 156 | **Design & Develop Opportunities Module** | 48d | 2014-06-18 A | 2014-08-22 |  |  |
| 160 | Change Requests and Enhancements | 40.12d | 2014-06-30 A | 2014-08-22 |  | finish no earlier than 2014-07-11 |
| 163 | **Design & Develop Entitlements** | 29d | 2014-06-18 A | 2014-07-28 |  |  |
| 166 | Change Requests and Enhancements | 2.16d | 2014-06-30 A | 2014-07-02 A |  | finish no earlier than 2014-07-11 |
| 169 | Bug Fixing & Stabilize code for Reports | 2d | 2014-07-25 | 2014-07-28 | 168 | start no earlier than 2014-07-24 |
| 170 | **Design & Develop Advanced Search** | 29d | 2014-06-18 A | 2014-07-28 |  |  |
| 174 | Change Requests and Enhancements | 10d | 2014-06-30 A | 2014-07-11 |  | finish no earlier than 2014-07-11 |
| 176 | Bug Fixing & Stabilize code for Reports | 2d | 2014-07-25 A | 2014-07-28 | 175 | start no earlier than 2014-07-24 |
| 185 | Entitlement based updates to the model and enhancements | 10d | 2014-06-30 A | 2014-07-11 |  | finish no earlier than 2014-07-11 |
| 190 | Impact changes on integration time and code management | 10d | 2014-08-28 A | 2014-09-10 |  | finish no earlier than 2014-09-10 |
| 220 | Additional Testing load on New Modules and Functionalities | 8d | 2014-08-04 | 2014-08-13 |  | finish no earlier than 2014-08-13 |
| 226 | Additional Testing load on New Modules and Functionalities | 8d | 2014-08-04 | 2014-08-13 |  | finish no earlier than 2014-08-13 |
| 232 | Additional Testing load on New Modules and Functionalities | 8d | 2014-08-04 | 2014-08-13 |  | finish no earlier than 2014-08-13 |
| 255 | **Product Implementation Phase (Beta)** | 254d | 2013-10-25 A | 2014-10-16 |  |  |
| 256 | **Design / Review Module Moqups** | 38d | 2013-10-25 A | 2013-12-18 A |  |  |
| 257 | Contacts Module Enhancements - Reviews | 6.12d | 2013-10-25 A | 2013-11-04 A |  | start no earlier than 2013-10-25 |
| 258 | Opportunities Module Enhancements - Reviews | 7.38d | 2013-11-01 A | 2013-11-12 A |  | start no earlier than 2013-11-01 |
| 259 | Marketing Automation - Reviews | 5.75d | 2013-11-12 A | 2013-11-19 A |  | start no earlier than 2013-11-12 |
| 260 | Account Dashboard - Reviews | 3d | 2013-11-29 A | 2013-12-04 A |  | start no earlier than 2013-11-29 |
| 261 | Reports - Reviews | 6.12d | 2013-12-05 A | 2013-12-13 A |  | start no earlier than 2013-12-05 |
| 262 | 3rd Party & External Components Integrations | 3d | 2013-12-13 A | 2013-12-18 A |  | start no earlier than 2013-12-13 |
| 263 | **Finalizing Prototypes & Interface Documents - Business Sign-off** | 47.84d | 2013-11-01 A | 2014-01-07 A |  |  |
| 264 | Contacts Module Enhancements - Review & Update | 5.41d | 2013-11-01 A | 2013-11-08 A | 257 | start no earlier than 2013-11-01 |
| 265 | Opportunities Module Enhancements - Review & Update | 5.46d | 2013-11-15 A | 2013-11-22 A |  | start no earlier than 2013-11-15 |
| 266 | Marketing Automation - Review & Update | 5.46d | 2013-11-15 A | 2013-11-22 A |  | start no earlier than 2013-11-15 |
| 267 | Account Dashboard - Review & Update | 6.08d | 2013-12-20 A | 2013-12-30 A |  | start no earlier than 2013-12-20 |
| 268 | Reports - Review and Update | 7.45d | 2013-12-25 A | 2014-01-03 A | 267 | start no earlier than 2013-12-25 |
| 269 | 3rd Party & External Components Integrations - Reviews & Update | 3.85d | 2014-01-02 A | 2014-01-07 A | 268 | start no earlier than 2014-01-02 |
| 270 | **Functional Development** | 93.88d | 2014-05-30 A | 2014-10-08 |  |  |
| 271 | **Design & Develop Contacts Module Enhancements** | 21d | 2014-09-09 | 2014-10-08 |  |  |
| 272 | Design Review and Finalize Data Model | 2d | 2014-09-09 | 2014-09-11 |  | start no earlier than 2014-09-09 |
| 273 | Integration of Final UI from Prototypes | 5d | 2014-09-11 | 2014-09-18 | 272 |  |
| 274 | Development of Module | 12d | 2014-09-18 | 2014-10-06 | 273 |  |
| 275 | Functional Testing of Module | 1d | 2014-10-06 | 2014-10-07 | 274 |  |
| 276 | Bug Fixing & Stabilize code for Contacts | 1d | 2014-10-07 | 2014-10-08 | 275 |  |
| 278 | Design Review and Finalize Data Model | 3d | 2014-08-27 | 2014-08-29 |  | finish no earlier than 2014-08-29 |
| 279 | Integration of Final UI from Prototypes | 1d | 2014-09-01 | 2014-09-01 | 278 | start no earlier than 2014-02-18 |
| 280 | Development of Module | 20d | 2014-09-02 | 2014-09-29 | 279 | start no earlier than 2014-02-19 |
| 281 | Functional Testing of Module | 5d | 2014-09-30 | 2014-10-06 | 280 | start no earlier than 2014-04-02 |
| 283 | **Design & Develop of Opportunities Module Enhancements** | 30d | 2014-07-08 A | 2014-08-19 |  |  |
| 284 | Design Review and Finalize Data Model | 2d | 2014-07-08 A | 2014-07-10 |  | start no earlier than 2014-04-02 |
| 285 | Integration of Final UI from Prototypes | 4d | 2014-07-15 A | 2014-07-21 | 284 |  |
| 286 | Development of Module | 20d | 2014-07-08 A | 2014-08-05 |  | finish no earlier than 2013-12-23 |
| 287 | Functional Testing of Module | 15d | 2014-07-29 A | 2014-08-19 | 286 |  |
| 288 | Bug Fixing & Stabilize code for Opportunities | 15d | 2014-07-29 A | 2014-08-19 |  | finish no earlier than 2014-08-21 |
| 290 | Design Review and Finalize Data Model | 2d | 2014-07-22 A | 2014-07-24 |  | start no earlier than 2014-05-27 |
| 291 | Integration of Final UI from Prototypes | 39.99d | 2014-05-30 A | 2014-07-25 | 290 | start no earlier than 2014-05-29 |
| 292 | Development of Module | 7d | 2014-08-26 | 2014-09-04 | 291 | start no earlier than 2014-08-26 |
| 293 | Change Requests and Enhancements - UI | 10d | 2014-08-26 A | 2014-09-09 |  | finish no earlier than 2014-07-11 |
| 294 | Change Requests and Enhancements - Scope Enhancement | 10d | 2014-08-27 | 2014-09-09 |  | finish no earlier than 2014-09-09 |
| 295 | Functional Testing of Module | 10d | 2014-09-09 | 2014-09-23 | 292 | start no earlier than 2014-09-09 |
| 298 | Design Review and Finalize Data Model | 2d | 2014-07-29 A | 2014-07-31 |  | start no earlier than 2014-06-17 |
| 299 | Integration of Final UI from Prototypes | 29.88d | 2014-06-20 A | 2014-07-31 | 298 | start no earlier than 2014-06-19 |
| 300 | Development of Module | 20d | 2014-08-26 | 2014-09-23 | 299 | start no earlier than 2014-08-26 |
| 301 | Change Requests and Enhancements | 10d | 2014-08-27 | 2014-09-09 |  | finish no earlier than 2014-09-09 |
| 302 | Functional Testing of Module | 8d | 2014-09-23 | 2014-10-03 | 300 | start no earlier than 2014-07-18 |
| 303 | Bug Fixing & Stabilize code for Reports | 2d | 2014-10-03 | 2014-10-07 | 302 | start no earlier than 2014-07-24 |
| 304 | **Design & Develop 3rd Party Components and Integrations** | 52.56d | 2014-07-24 | 2014-10-06 |  |  |
| 305 | Design Review and Finalize Data Model | 52d | 2014-07-24 | 2014-10-06 |  | start no earlier than 2014-07-24 |
| 306 | Integration of Final UI from Prototypes | 47.56d | 2014-07-31 | 2014-10-06 |  | start no earlier than 2014-07-31 |
| 307 | Development of Module | 30d | 2014-08-05 | 2014-09-16 |  | start no earlier than 2014-08-05 |
| 308 | Functional Testing of Module | 10d | 2014-09-09 | 2014-09-23 |  | start no earlier than 2014-09-09 |
| 309 | Bug Fixing & Stabilize code for 3rd Party Components & Integrations | 10d | 2014-09-16 | 2014-09-30 |  | start no earlier than 2014-09-16 |
| 310 | **Module Level Integration & Integration Unit Testing** | 7d | 2014-10-07 | 2014-10-16 |  |  |
| 311 | Module Level Integration | 5.59d | 2014-10-07 | 2014-10-14 |  | start no earlier than 2014-10-07 |
| 312 | Integration Unit Testing and Bug Fixing | 4d | 2014-10-09 | 2014-10-15 |  | start no earlier than 2014-10-09 |
| 313 | Build Stabilization & Readyness | 1d | 2014-10-15 | 2014-10-16 |  | start no earlier than 2014-10-15 |
| 314 | **Testing Phase (Beta)** | 79d | 2014-09-04 A | 2014-12-23 |  |  |
| 315 | **Integration Testing** | 27.88d | 2014-10-07 A | 2014-11-13 |  |  |
| 316 | Identify Integration Testing Guidelines & Checklist | 1d | 2014-10-07 A | 2014-10-08 |  | start no earlier than 2014-10-07 |
| 317 | Integration Testing & Bug Fixing | 25.88d | 2014-10-07 A | 2014-11-11 |  | finish no earlier than 2014-11-11 |
| 318 | Publish Integration Testing Results for Final UAT | 3d | 2014-11-11 | 2014-11-13 |  | finish no earlier than 2014-11-13 |
| 319 | **UI Interface & Cross Borwser Testing** | 32d | 2014-09-04 | 2014-10-17 |  |  |
| 320 | Identify UI Interfacing Testing Guidelines & Checklist | 2d | 2014-09-04 | 2014-09-05 |  | finish no earlier than 2014-09-05 |
| 321 | UI Testing & Bug Fixing | 30d | 2014-09-04 | 2014-10-15 |  | finish no earlier than 2014-10-15 |
| 322 | Publish UI Testing Results for Final UAT | 2d | 2014-10-16 | 2014-10-17 |  | finish no earlier than 2014-10-17 |
| 323 | **Database design & Load / Performance Testing** | 30d | 2014-10-08 | 2014-11-18 |  |  |
| 324 | Identify Database Testing Guidelines & Checklist | 3d | 2014-10-08 | 2014-10-10 |  | finish no earlier than 2014-10-10 |
| 325 | Create DB Test Scripts & Test Cases | 10d | 2014-10-13 | 2014-10-24 |  | finish no earlier than 2014-10-24 |
| 326 | Database Testing & Bug Fixing | 20d | 2014-10-20 | 2014-11-14 |  | finish no earlier than 2014-11-14 |
| 327 | Publish Databsae Design Testing Results for Final UAT | 1d | 2014-11-18 | 2014-11-18 |  | finish no earlier than 2014-11-18 |
| 328 | **Regression / UAT Testing** | 32d | 2014-11-10 | 2014-12-23 |  |  |
| 329 | Identify Regression Testing Guidelines & Checklist | 2d | 2014-11-18 | 2014-11-19 |  | finish no earlier than 2014-11-19 |
| 330 | Regression Testing & Bug Fixing | 30d | 2014-11-10 | 2014-12-19 |  | finish no earlier than 2014-12-19 |
| 331 | Publish Regression Testing Results for Final UAT | 1d | 2014-12-23 | 2014-12-23 |  | finish no earlier than 2014-12-23 |
| 332 | **Product Migration Phase (Beta)** | 47d | 2014-10-16 | 2014-12-22 |  |  |
| 333 | **Migration Readiness for Existing Small Clients** | 38.88d | 2014-10-16 | 2014-12-09 |  |  |
| 337 | **Identify and Plan Migration Strategy for New Clients** | 17d | 2014-11-27 | 2014-12-22 |  |  |
| 338 | Development of Data Migration Services & Validation Scripts | 10d | 2014-11-27 | 2014-12-11 |  | start no earlier than 2014-11-27 |
| 339 | Unit Testing and Data Import on DEV | 3d | 2014-12-11 | 2014-12-16 | 338 | start no earlier than 2014-09-12 |
| 340 | Create Stage DB with Migrated Data for Test - UAT / Sign-off | 4d | 2014-12-16 | 2014-12-22 | 339 | start no earlier than 2014-09-17 |
| 341 | **Product Deployment Phase (Beta)** | 7d | 2014-12-22 | 2014-12-31 |  |  |
| 342 | **Deployment Strategy Plan** | 4d | 2014-12-22 | 2014-12-26 |  |  |
| 343 | Design & Review Deployment Strategy for Final Client Signoff | 4d | 2014-12-22 | 2014-12-26 | 340 | start no earlier than 2014-12-19 |
| 344 | **Release Readiness Checklist** | 5d | 2014-12-22 | 2014-12-29 |  |  |
| 345 | Design and Review to Publish Release Readiness for Client Sign off | 5d | 2014-12-22 | 2014-12-29 | 340 | start no earlier than 2014-12-19 |
| 346 | **GO-LIVE** | 6d | 2014-12-23 | 2014-12-31 |  |  |
| 347 | Prepare the Deployable Code / DB for GOLIVE | 2d | 2014-12-23 | 2014-12-25 |  | start no earlier than 2014-12-23 |
| 348 | Deploy Code on Servers | 1d | 2014-12-23 | 2014-12-24 |  | start no earlier than 2014-12-23 |
| 350 | Smoke Test for final GOLIVE Validation | 2d | 2014-12-26 | 2014-12-30 |  | start no earlier than 2014-12-26 |
| 351 | Publish GOLIVE Notifications | 1d | 2014-12-30 | 2014-12-31 | 350 | start no earlier than 2014-12-30 |
| 352 | **Product Implementation Phase (Live)** | 376.12d | 2013-11-01 | 2015-04-13 |  |  |
| 353 | **Design / Review Module Moqups** | 27.62d | 2013-11-08 | 2013-12-18 |  |  |
| 354 | Change Requests Across Modules | 7.5d | 2013-11-08 | 2013-11-19 |  | finish no earlier than 2013-11-19 |
| 355 | Marketing Automation Change Requests / Enhancements | 5.75d | 2013-11-12 | 2013-11-19 |  | start no earlier than 2013-11-12 |
| 356 | Advanced Entitelemnts - Data Sharing & Roles Builder | 2.88d | 2013-11-26 | 2013-11-28 |  | start no earlier than 2013-11-26 |
| 357 | 3rd Party & External Components Integrations | 3d | 2013-12-13 | 2013-12-18 |  | start no earlier than 2013-12-13 |
| 358 | **Finalizing Prototypes & Interface Documents - Business Sign-off** | 36.12d | 2013-11-01 | 2013-12-23 |  |  |
| 359 | Change Requests Across Modules | 16d | 2013-11-01 | 2013-11-22 |  | finish no earlier than 2013-11-22 |
| 360 | Marketing Automation Change Requests / Enhancements | 5.46d | 2013-11-15 | 2013-11-22 |  | start no earlier than 2013-11-15 |
| 361 | Advanced Entitelemnts - Data Sharing & Roles Builder | 5.66d | 2013-11-22 | 2013-12-02 | 360 | start no earlier than 2013-11-22 |
| 362 | 3rd Party & External Components Integrations | 15d | 2013-12-02 | 2013-12-23 | 361 | finish no earlier than 2013-12-20 |
| 363 | **Application Designing & Development Preparation** | 20d | 2013-12-03 | 2013-12-31 |  |  |
| 364 | **POC Practices** | 3d | 2013-12-03 | 2013-12-06 |  |  |
| 365 | Identify POC Requirements | 2d | 2013-12-03 | 2013-12-05 |  | start no earlier than 2013-12-03 |
| 366 | Developing POC's | 2d | 2013-12-04 | 2013-12-06 |  | start no earlier than 2013-12-04 |
| 367 | Review and Apporovals of POC's | 2d | 2013-12-04 | 2013-12-06 |  | start no earlier than 2013-12-04 |
| 368 | **Web UI Application Design Practices** | 9d | 2013-12-18 | 2013-12-31 |  |  |
| 369 | Identify UI Components for Integration and Designing | 4d | 2013-12-18 | 2013-12-24 |  | start no earlier than 2013-12-18 |
| 370 | Kendo UI - Framwork Update and Integration | 5d | 2013-12-24 | 2013-12-31 | 369 | start no earlier than 2013-12-24 |
| 371 | **Functional Development** | 339d | 2013-12-24 | 2015-04-13 |  |  |
| 372 | **Design & Develop of Change Requests Across All Modules** | 326.88d | 2013-12-24 | 2015-03-25 |  |  |
| 373 | Design Review and Finalize Data Model | 269.88d | 2013-12-24 | 2015-01-05 |  | start no earlier than 2013-12-24 |
| 374 | Integration of Final UI from Prototypes | 5d | 2015-02-02 | 2015-02-09 | 373 | start no earlier than 2015-02-02 |
| 375 | Development of Module | 20d | 2015-02-09 | 2015-03-09 | 374 |  |
| 376 | Functional Testing of Module | 20d | 2015-02-25 | 2015-03-25 |  | start no earlier than 2015-02-25 |
| 377 | Bug Fixing & Stabilize code for Contacts | 20d | 2015-02-26 | 2015-03-25 |  | finish no earlier than 2015-03-25 |
| 378 | **Design & Develop - Enhancements In Marketing Automation Module** | 41d | 2014-12-24 | 2015-02-18 |  |  |
| 379 | Design Review and Finalize Data Model | 3d | 2014-12-24 | 2014-12-26 |  | finish no earlier than 2014-12-26 |
| 380 | Integration of Final UI from Prototypes | 1d | 2014-12-29 | 2014-12-29 | 379 | start no earlier than 2014-02-18 |
| 381 | Development of Module | 30d | 2014-12-30 | 2015-02-09 | 380 | start no earlier than 2014-02-19 |
| 382 | Functional Testing of Module | 5d | 2015-02-10 | 2015-02-16 | 381 | start no earlier than 2014-04-02 |
| 383 | Bug Fixing & Stabilize code for Marketing Automation | 2d | 2015-02-17 | 2015-02-18 | 382 | start no earlier than 2014-04-09 |
| 384 | **Design & Develop Entitlements Enhancements / Data Sharing** | 29d | 2015-01-06 | 2015-02-16 |  |  |
| 385 | Design Review and Finalize Data Model | 2d | 2015-01-06 | 2015-01-08 |  | start no earlier than 2015-01-06 |
| 386 | Integration of Final UI from Prototypes | 1d | 2015-01-08 | 2015-01-09 | 385 | start no earlier than 2014-06-19 |
| 387 | Development of Module | 20d | 2015-01-09 | 2015-02-06 | 386 | start no earlier than 2014-06-20 |
| 388 | Functional Testing of Module | 4d | 2015-02-06 | 2015-02-12 | 387 | start no earlier than 2014-07-18 |
| 389 | Bug Fixing & Stabilize code for Reports | 2d | 2015-02-12 | 2015-02-16 | 388 | start no earlier than 2014-07-24 |
| 390 | **Design & Develop 3rd Party Components and Integrations** | 80.12d | 2014-12-22 | 2015-04-13 |  |  |
| 391 | Design Review and Finalize Data Model | 20d | 2014-12-22 | 2015-01-16 |  | finish no earlier than 2015-01-16 |
| 392 | Integration of Final UI from Prototypes | 10d | 2015-01-19 | 2015-02-02 | 391 | start no earlier than 2015-01-19 |
| 393 | Development of Module | 20d | 2015-02-02 | 2015-03-02 | 392 | start no earlier than 2014-08-05 |
| 394 | Functional Testing of Module | 20d | 2015-03-02 | 2015-03-30 | 393 | start no earlier than 2014-09-09 |
| 395 | Bug Fixing & Stabilize code for 3rd Party Components & Integrations | 10d | 2015-03-30 | 2015-04-13 | 394 | start no earlier than 2014-09-16 |
| 396 | **Module Level Integration & Integration Unit Testing** | 10.59d | 2015-03-27 | 2015-04-10 |  |  |
| 397 | Module Level Integration | 5.59d | 2015-03-27 | 2015-04-03 |  | finish no earlier than 2015-04-03 |
| 398 | Integration Unit Testing and Bug Fixing | 4d | 2015-04-06 | 2015-04-09 | 397 | finish no earlier than 2015-04-03 |
| 399 | Build Stabilization & Readiness | 1d | 2015-04-10 | 2015-04-10 | 398 | start no earlier than 2014-08-13 |
| 400 | **Testing Phase (Live)** | 76.88d | 2015-01-20 | 2015-05-06 |  |  |
| 401 | **Integration Testing** | 10d | 2015-01-20 | 2015-02-03 |  |  |
| 402 | Identify Integration Testing Guidelines & Checklist | 1d | 2015-01-20 | 2015-01-21 |  | start no earlier than 2015-01-20 |
| 403 | Integration Testing & Bug Fixing | 8d | 2015-01-21 | 2015-02-02 | 402 | start no earlier than 2014-08-01 |
| 404 | Publish Integration Testing Results for Final UAT | 1d | 2015-02-02 | 2015-02-03 | 403 | start no earlier than 2014-08-13 |
| 405 | **UI / Browser Interface Testing** | 6d | 2015-02-03 | 2015-02-11 |  |  |
| 406 | Identify UI Interfacing Testing Guidelines & Checklist | 1d | 2015-02-03 | 2015-02-04 | 404 | start no earlier than 2014-08-14 |
| 407 | UI Testing & Bug Fixing | 4d | 2015-02-04 | 2015-02-10 | 406 | start no earlier than 2014-08-15 |
| 408 | Publish UI Testing Results for Final UAT | 1d | 2015-02-10 | 2015-02-11 | 407 | start no earlier than 2014-08-21 |
| 409 | **Database design Testing / Load & Performance** | 10d | 2015-02-11 | 2015-02-25 |  |  |
| 410 | Identify Database Testing Guidelines & Checklist | 1d | 2015-02-11 | 2015-02-12 | 408 | start no earlier than 2014-08-22 |
| 411 | Create DB Test Scripts & Test Cases | 4d | 2015-02-12 | 2015-02-18 | 410 | start no earlier than 2014-08-25 |
| 412 | Database Testing & Bug Fixing | 4d | 2015-02-18 | 2015-02-24 | 411 | start no earlier than 2014-08-29 |
| 413 | Publish Databsae Design Testing Results for Final UAT | 1d | 2015-02-24 | 2015-02-25 | 412 | start no earlier than 2014-09-04 |
| 414 | **Regression Testing / UAT** | 12d | 2015-04-21 | 2015-05-06 |  |  |
| 415 | Identify Regression Testing Guidelines & Checklist | 1d | 2015-04-21 | 2015-04-21 |  | finish no earlier than 2015-04-21 |
| 416 | Regression Testing & Bug Fixing | 10d | 2015-04-22 | 2015-05-05 | 415 | start no earlier than 2014-09-09 |
| 417 | Publish Regression Testing Results for Final UAT | 1d | 2015-05-06 | 2015-05-06 | 416 | start no earlier than 2014-09-23 |
| 418 | **Product Deployment Phase (Live)** | 164d | 2014-10-14 | 2015-05-29 |  |  |
| 419 | **Deployment Strategy Plan** | 4d | 2015-05-05 | 2015-05-08 |  |  |
| 420 | Design & Review Deployment Strategy for Final Client Signoff | 4d | 2015-05-05 | 2015-05-08 |  | finish no earlier than 2015-05-08 |
| 421 | **Release Readiness Checklist** | 5d | 2015-05-06 | 2015-05-12 |  |  |
| 422 | Design and Review to Publish Release Readiness for Client Sign off | 5d | 2015-05-06 | 2015-05-12 |  | finish no earlier than 2015-05-12 |
| 423 | **GO-LIVE** | 164d | 2014-10-14 | 2015-05-29 |  |  |
| 424 | Prepare the Deployable Code / DB for GOLIVE | 2d | 2014-10-14 | 2014-10-15 |  | finish no earlier than 2014-10-15 |
| 425 | Deploy Code on Servers | 1d | 2014-10-15 | 2014-10-16 |  | start no earlier than 2014-10-15 |
| 426 | Migration of Identified Clients Data to New Application DB | 1d | 2015-05-22 | 2015-05-22 | 425 | finish no earlier than 2015-05-22 |
| 427 | Smoke Test for final GOLIVE Validation | 2d | 2015-05-27 | 2015-05-28 |  | finish no earlier than 2015-05-28 |
| 428 | Publish GOLIVE Notifications | 1d | 2015-05-29 | 2015-05-29 | 427 | finish no earlier than 2015-05-29 |

Removed: 223 Design and Propose Development Plan of Migration for Approvals; 224 Document and Propose the Data Migration Development Approaches and Plan; 245 Moniter and Maintain the Stability of the Build

Changed:

| ID | Task | Start | Finish | Duration | Complete | Total float | Predecessors | Other |
| --- | --- | --- | --- | --- | --- | --- | --- | --- |
| 43 | **Product Implementation Phase (Alpha)** |  |  |  | 55% → 86% | 25.59d → 180.88d |  | was named Product Implementation Phase |
| 66 | **Development Design Plan** |  |  |  | 14% → 99% | 81.59d → 236.88d |  |  |
| 67 | Design and Document Solution Architecture. |  |  |  | 72% → 84% | 238.59d → 393.88d |  |  |
| 71 | Identify the Components for POC's and Validating Components |  | 2014-07-03 A |  | 1% → 100% | 81.59d → none |  |  |
| 74 | DB Architecture Design Review and Analysis |  |  |  | 1% → 99% | 82.71d → 238d |  |  |
| 79 | **QA Test Preparations & Planning** |  |  |  | 93% → 99% | 197.46d → 352.75d |  |  |
| 82 | Document Test Cases for Final Signed-off Modules |  | 2014-01-07 A |  | 84% → 100% | 208.46d → none |  |  |
| 83 | Review and Finalize Test Cases |  |  |  | 74% → 89% | 205.46d → 360.75d |  |  |
| 86 | **Application Designing & Development Preparation** |  | 2014-01-29 → 2014-07-11 (+163d) | 41d → 158.88d | 98% → 86% | 192.59d → 230d |  |  |
| 105 | **Application Security** |  | 2014-01-29 → 2014-07-11 (+163d) | 5d → 122.88d | 80% → 46% | 192.59d → 230d |  |  |
| 106 | MembershipProvider for authentication & authorization |  | 2014-01-29 A |  | 80% → 100% | 192.59d → none |  |  |
| 112 | **Functional Development** |  |  |  | 64% → 75% | 25.59d → 180.88d |  |  |
| 113 | **Design & Develop Contacts Module** |  | 2014-02-21 → 2014-09-05 (+196d) | 24d → 164.88d | 97% → 82% | 175.59d → 190d |  |  |
| 120 | **Design & Develop Campaigns Module** |  | 2014-04-07 → 2014-09-05 (+151d) | 41d → 150d | 95% → 78% | 143.71d → 190d |  |  |
| 128 | **Design & Develop Internet Forms/Lead Captures Module** |  | 2014-05-06 → 2014-08-22 (+108d) | 24d → 102d | 94% → 80% | 122.71d → 200d |  |  |
| 129 | Design Review and Finalize Data Model |  |  |  |  |  | 159 → none |  |
| 131 | Development of Module |  |  |  | 95% → 98% | 3.4d → 3.6d |  |  |
| 133 | Functional Testing of Module |  |  |  | 85% → 90% | 1.71d → 1.57d |  |  |
| 134 | Bug Fixing & Stabilize code for Internet Forms / Lead Captures |  |  |  | 86% → 79% | 122.71d → 278d |  |  |
| 135 | **Design & Develop Personal Settings Module** |  | 2014-05-02 → 2014-08-22 (+112d) | 19d → 99d | 89% → 84% | 124.71d → 200d |  |  |
| 138 | Development of Module |  |  |  | 93% → 98% | 3.04d → 3.68d |  |  |
| 140 | Functional Testing of Module |  |  |  | 76% → 92% | 1.62d → 1.88d |  |  |
| 141 | Bug Fixing & Stabilize code for Personal Settings |  |  |  | 81% → 94% | 124.71d → 280d |  |  |
| 142 | **Design & Develop Account Admin Settings Module** |  | 2014-06-19 → 2014-08-29 (+71d) | 34d → 85d | 91% → 61% | 90.71d → 195d |  |  |
| 145 | Development of Module |  |  |  | 93% → 98% | 3.2d → 3.6d |  |  |
| 147 | Functional Testing of Module |  |  |  | 80% → 90% | 0.5d → 1.75d |  |  |
| 148 | Bug Fixing & Stabilize code for Account Admin Settings |  |  |  | 75% → 88% | 90.71d → 246d |  |  |
| 149 | **Design & Develop Super Admin - Accounts Management Module** |  | 2014-05-28 → 2014-08-29 (+93d) | 20d → 87d | 90% → 64% | 106.71d → 195d |  |  |
| 152 | Development of Module |  |  |  | 91% → 96% | 0.7d → 0.9d |  |  |
| 154 | Functional Testing of Module |  |  |  | 70% → 90% | 0.2d → 0.89d |  |  |
| 155 | Bug Fixing & Stabilize code for Super Admin - Accounts Management |  |  |  | 72% → 89% | 106.71d → 262d |  |  |
| 157 | Design Review and Finalize Data Model | 2014-02-14 → 2014-06-18 A (+124d) | 2014-02-18 → 2014-06-19 A (+121d) | 3d → 2d | 0% → 100% | 139.71d → none | 122 → 147 | constraint start no earlier than 2014-02-13 → start no earlier than 2014-06-17 |
| 158 | Integration of Final UI from Prototypes | 2014-02-19 → 2014-06-20 A (+121d) | 2014-02-19 → 2014-06-20 A (+121d) |  | 0% → 100% | 139.71d → none |  | constraint start no earlier than 2014-02-18 → start no earlier than 2014-06-19 |
| 159 | Development of Module | 2014-02-20 → 2014-06-23 A (+123d) | 2014-04-02 → 2014-07-18 (+107d) | 30d → 20d | 0% → 92% | 139.71d → 3.2d |  | constraint start no earlier than 2014-02-19 → start no earlier than 2014-06-20 |
| 161 | Functional Testing of Module | 2014-04-03 → 2014-07-21 A (+109d) | 2014-04-09 → 2014-07-24 (+106d) | 5d → 4d | 0% → 80% | 139.71d → 1.33d |  | constraint start no earlier than 2014-04-02 → start no earlier than 2014-07-18 |
| 162 | Bug Fixing & Stabilize code for Reports | 2014-07-25 A |  |  | 0% → 67% | 63.71d → 219d | 175 → 161 |  |
| 164 | Design Review and Finalize Data Model | 2014-05-28 A → 2014-06-18 A (+21d) | 2014-05-29 → 2014-06-19 A (+21d) |  | 10% → 100% | 0.13d → none | 154 → 147 | constraint start no earlier than 2014-05-27 → start no earlier than 2014-06-17 |
| 165 | Integration of Final UI from Prototypes | 2014-05-30 A → 2014-06-20 A (+21d) | 2014-05-30 → 2014-06-20 A (+21d) |  | 13% → 100% | 0.47d → none |  | constraint start no earlier than 2014-05-29 → start no earlier than 2014-06-19 |
| 167 | Development of Module | 2014-06-02 A → 2014-06-23 A (+21d) | 2014-06-10 → 2014-07-18 (+38d) | 7d → 20d | 7% → 90% | 91.71d → 2d |  | constraint start no earlier than 2014-05-30 → start no earlier than 2014-06-20 |
| 168 | Functional Testing of Module | 2014-06-11 → 2014-07-21 A (+40d) | 2014-06-16 → 2014-07-24 (+38d) |  | 0% → 50% | 91.71d → 1.6d |  | constraint start no earlier than 2014-06-10 → start no earlier than 2014-07-18 |
| 171 | Design Review and Finalize Data Model |  | 2014-06-19 A |  | 25% → 100% | 0.25d → none |  |  |
| 173 | Development of Module |  |  |  | 6% → 76% | 2.4d → 2.67d |  |  |
| 175 | Functional Testing of Module | 2014-07-21 A |  |  | 0% → 67% | 2.4d → 0.67d |  |  |
| 177 | **Design & Develop 3rd Party Components and Integrations** |  |  |  | 75% → 79% | 25.59d → 180.88d |  |  |
| 178 | Design Review and Finalize Data Model |  |  |  | 80% → 88% | 2.44d → 2.62d | 175 → 161, 168, 175 |  |
| 179 | Integration of Final UI from Prototypes |  |  |  | 81% → 88% | 20d → 20.59d |  |  |
| 180 | Development of Module |  |  |  | 80% → 82% | 2.78d → 3.33d |  |  |
| 181 | Functional Testing of Module |  |  |  | 56% → 67% | 1.71d → 1.29d |  |  |
| 182 | Bug Fixing & Stabilize code for 3rd Party Components & Integrations |  |  |  | 57% → 43% | 25.59d → 180.88d |  |  |
| 183 | **Open API to third party developers** | 2014-07-25 A → 2014-06-30 A (-25d) |  | 5d → 24d | 61% → 46% | 1.86d → 181.12d |  |  |
| 184 | Open API to third party developers |  |  |  | 60% → 40% | 0.67d → 0.33d | 175 → 161, 168, 175 |  |
| 186 | Unit & Integration Testing |  |  |  | 67% → 33% | 1.86d → 3.29d |  |  |
| 187 | **Module Level Integration & Integration Unit Testing** |  | 2014-08-14 → 2014-09-10 (+27d) | 10.59d → 29.88d | 50% → 54% | 0.8d → 187d |  |  |
| 188 | Module Level Integration |  |  |  | 49% → 74% | 2.22d → 2.67d |  |  |
| 189 | Integration Unit Testing and Bug Fixing |  |  |  | 56% → 67% |  |  |  |
| 192 | **Testing Phase (Alpha)** |  |  |  | 38% → 28% | 22.59d → 177.88d |  | was named Testing Phase |
| 200 | **Integration Testing** |  |  |  | 41% → 54% |  |  |  |
| 201 | Identify Integration Testing Guidelines & Checklist |  |  |  | 38% → 63% | 3.56d → 4.44d |  |  |
| 202 | Integration Testing & Bug Fixing |  |  |  | 44% → 56% | 0.17d → 0.33d |  |  |
| 203 | Publish Integration Testing Results for Final UAT |  |  |  | 17% → 33% |  |  |  |
| 204 | **UI Interface Testing** |  |  |  | 48% → 44% |  |  |  |
| 206 | UI Testing & Bug Fixing |  |  |  | 54% → 46% | 0d → 0.17d |  |  |
| 212 | **Database design Testing** |  |  |  | 39% → 34% | 35.59d → 190.88d |  |  |
| 214 | Create DB Test Scripts & Test Cases |  |  |  | 63% → 50% |  |  |  |
| 217 | **Security Penetration/Venurability Tests** | 2014-08-22 A → 2014-08-04 A (-18d) |  | 11d → 25.12d | 19% → 11% | 34.59d → 189.88d |  |  |
| 221 | Security Testing & Bug Fixing |  |  |  | 25% → 20% |  |  |  |
| 223 | **Performance & Load Testing** | 2014-09-05 A → 2014-08-04 A (-32d) |  | 13d → 37.12d | 32% → 18% | 22.59d → 177.88d |  |  |
| 227 | Performance Testing & Bug Fixing |  |  |  | 25% → 20% | 22.59d → 143d |  |  |
| 229 | **Regression Testing** | 2014-09-08 A → 2014-08-04 A (-35d) |  | 12d → 37.12d | 24% → 9% | 22.59d → 177.88d |  |  |
| 231 | Regression Testing & Bug Fixing |  |  |  | 25% → 15% | 22.59d → 143d |  |  |

| ID | Task | Start | Finish | Duration | Complete | Total float | Predecessors | Other |
| --- | --- | --- | --- | --- | --- | --- | --- | --- |
| 234 | **Product Migration Phase (Alpha)** |  | 2014-09-23 → 2014-08-28 (-26d) | 28d → 10d | 3% → 8% | 0d → 196.29d |  | was named Product Migration Phase |
| 239 | **Product Deployment Phase (Alpha)** | 2014-09-23 → 2014-09-16 (-7d) | 2014-10-24 → 2014-10-03 (-21d) | 23d → 13d |  | 0d → 170.88d |  | was named Product Deployment Phase |
| 240 | **Deployment Strategy Plan** | 2014-09-23 → 2014-09-16 (-7d) | 2014-09-29 → 2014-09-22 (-7d) |  |  | 19d → 179.88d |  |  |
| 241 | Design & Review Deployment Strategy for Final Client Signoff | 2014-09-23 → 2014-09-16 (-7d) | 2014-09-29 → 2014-09-22 (-7d) |  |  | 19d → 179.88d | 336 → none | constraint start no earlier than 2014-09-23 → start no earlier than 2014-09-16 |
| 242 | **Release Readiness Checklist** | 2014-09-23 → 2014-09-16 (-7d) | 2014-09-30 → 2014-09-23 (-7d) |  |  | 0d → 172.88d |  |  |
| 243 | Design and Review to Publish Release Readiness for Client Sign off | 2014-09-23 → 2014-09-16 (-7d) | 2014-09-30 → 2014-09-23 (-7d) |  |  | 0d → 172.88d | 336 → none | constraint start no earlier than 2014-09-23 → start no earlier than 2014-09-16 |
| 244 | **Set-up Deployment Infrastructure** | 2014-09-30 → 2014-09-23 (-7d) | 2014-10-10 → 2014-10-01 (-9d) | 8d → 6d |  | 0d → 172.88d |  |  |
| 245 | Identify The Infrastucture Requirements for Procurements | 2014-09-30 → 2014-09-23 (-7d) | 2014-10-02 → 2014-09-25 (-7d) |  |  | 0d → 172.88d |  | constraint start no earlier than 2014-09-30 → start no earlier than 2014-09-23 |
| 246 | Get Quotes and Estimates From Providers / Infra Details from Client | 2014-10-02 → 2014-09-25 (-7d) | 2014-10-07 → 2014-09-30 (-7d) |  |  | 0d → 172.88d |  | constraint start no earlier than 2014-10-02 → start no earlier than 2014-09-25 |
| 247 | Analyse the Final Deployment Infrasture for GO-LIVE | 2014-10-07 → 2014-09-30 (-7d) | 2014-10-10 → 2014-10-01 (-9d) | 3d → 1d |  | 0d → 172.88d |  | constraint start no earlier than 2014-10-07 → start no earlier than 2014-09-30 |
| 248 | **GO-LIVE** | 2014-10-10 → 2014-09-23 (-17d) | 2014-10-24 → 2014-10-03 (-21d) | 10d → 8d |  | 0d → 170.88d |  |  |
| 249 | Prepare the Deployable Code / DB for GOLIVE | 2014-10-10 → 2014-09-23 (-17d) | 2014-10-14 → 2014-09-25 (-19d) |  |  | 0d → 174.88d | 247 → none | constraint start no earlier than 2014-10-10 → start no earlier than 2014-09-23 |
| 250 | Environment Set-up for GOLIVE | 2014-10-14 → 2014-09-30 (-14d) | 2014-10-15 → 2014-10-01 (-14d) |  |  | 0d → 171.88d |  | constraint start no earlier than 2014-10-14 → start no earlier than 2014-09-30 |
| 251 | Deploy Code on Servers & Configure Initial Settings | 2014-10-15 → 2014-10-01 (-14d) | 2014-10-16 → 2014-10-02 (-14d) |  |  | 0d → 171.88d |  | constraint start no earlier than 2014-10-15 → start no earlier than 2014-10-01 |
| 252 | Deploy all Schedulars and Services for GOLIVE | 2014-10-17 → 2014-10-01 (-16d) | 2014-10-20 → 2014-10-02 (-18d) |  |  | 1d → 171.88d | 349 → none | constraint start no earlier than 2014-10-17 → start no earlier than 2014-10-01 |
| 253 | Smoke Test for final GOLIVE Validation | 2014-10-20 → 2014-10-01 (-19d) | 2014-10-22 → 2014-10-03 (-19d) |  |  | 1d → 170.88d | 252 → none | constraint start no earlier than 2014-10-20 → start no earlier than 2014-10-01 |
| 254 | Publish GOLIVE Notifications | 2014-10-22 → 2014-10-02 (-20d) | 2014-10-23 → 2014-10-03 (-20d) |  |  | 1d → 170.88d | 253 → none | constraint start no earlier than 2014-10-22 → start no earlier than 2014-10-02 |
| 277 | **Design & Develop Marketing Automation Module** | 2014-02-14 → 2014-08-27 (+194d) | 2014-04-11 → 2014-10-08 (+180d) | 41d → 31d |  | 139.71d → 167d |  |  |
| 282 | Bug Fixing & Stabilize code for Marketing Automation | 2014-04-10 → 2014-10-07 (+180d) | 2014-04-11 → 2014-10-08 (+180d) |  |  | 139.71d → 59.12d | 161 → 281 |  |
| 289 | **Design & Develop Account Dashboard Module** | 2014-05-28 A → 2014-05-30 A (+2d) | 2014-06-18 → 2014-10-07 (+111d) | 16d → 92d | 5% → 7% | 91.71d → 168.88d |  |  |
| 296 | Bug Fixing & Stabilize code for Account Dashboard | 2014-06-17 → 2014-09-23 (+98d) | 2014-06-18 → 2014-10-07 (+111d) | 2d → 10d |  | 91.71d → 61d | 168 → 295 |  |
| 297 | **Design & Develop Account Reports Module** | 2014-06-18 A → 2014-06-20 A (+2d) | 2014-07-28 → 2014-10-07 (+71d) | 29d → 77.12d | 6% → 1% | 63.71d → 168.88d |  |  |
| 334 | Development of Data Migration Services & Validation Scripts | 2014-08-29 → 2014-10-16 (+48d) | 2014-09-12 → 2014-10-20 (+38d) | 10d → 2d |  | 0d → 44d | Document and Propose the Data Migration Development Approaches and Plan → 313 | constraint start no earlier than 2014-08-29 → start no earlier than 2014-08-14 |
| 335 | Unit Testing and Data Import on DEV | 2014-09-12 → 2014-11-28 (+77d) | 2014-09-17 → 2014-12-03 (+77d) | 3d → 4d |  | 0d → 123d |  | constraint start no earlier than 2014-09-12 → finish no earlier than 2014-12-03 |
| 336 | Create Stage DB with Migrated Data for Test - UAT / Sign-off | 2014-09-17 → 2014-12-04 (+78d) | 2014-09-23 → 2014-12-09 (+77d) |  |  | 0d → 123d |  | constraint start no earlier than 2014-09-17 → start no earlier than 2014-08-22 |
| 349 | Migration of Identified Clients Data to New Application DB | 2014-10-16 → 2014-12-24 (+69d) | 2014-10-17 → 2014-12-25 (+69d) |  |  | 1d → 4d | 251 → 348 | constraint start no earlier than 2014-10-16 → start no earlier than 2014-12-24 |

## Version 18 (data date 2013-10-01, saved 2014-09-12, file SmartTouchCRM V 2.012092014.mpp)

Note of the change: adding to git

Last finish stays 2015-05-29.

Changed:

| ID | Task | Start | Complete | Total float |
| --- | --- | --- | --- | --- |
| 43 | **Product Implementation Phase (Alpha)** |  | 86% → 87% |  |
| 112 | **Functional Development** |  | 75% → 76% |  |
| 170 | **Design & Develop Advanced Search** |  | 73% → 77% |  |
| 173 | Development of Module |  | 76% → 84% |  |
| 177 | **Design & Develop 3rd Party Components and Integrations** |  | 79% → 80% |  |
| 179 | Integration of Final UI from Prototypes |  | 88% → 94% |  |
| 182 | Bug Fixing & Stabilize code for 3rd Party Components & Integrations |  | 43% → 57% |  |
| 192 | **Testing Phase (Alpha)** |  | 28% → 41% |  |
| 200 | **Integration Testing** |  | 54% → 64% |  |
| 201 | Identify Integration Testing Guidelines & Checklist |  | 63% → 75% | 4.44d → 5.33d |
| 202 | Integration Testing & Bug Fixing |  | 56% → 67% |  |
| 204 | **UI Interface Testing** |  | 44% → 60% | 0.33d → 0.5d |
| 206 | UI Testing & Bug Fixing |  | 46% → 71% |  |
| 208 | **Cross Browser Testing** |  | 39% → 51% |  |
| 210 | Cross Browser Testing & Bug Fixing |  | 46% → 62% | 0.17d → 0.33d |
| 211 | Publish Cross Browser Testing Results for Final UAT |  | 17% → 33% | 164d → 198.88d |
| 212 | **Database design Testing** |  | 34% → 46% |  |
| 213 | Identify Database Testing Guidelines & Checklist |  | 33% → 50% | 0.6d → 1.2d |
| 214 | Create DB Test Scripts & Test Cases |  | 50% → 63% | 1.07d → 1.6d |
| 215 | Database Testing & Bug Fixing |  | 27% → 40% | 155d → 34d |
| 217 | **Security Penetration/Venurability Tests** |  | 11% → 22% |  |
| 218 | Identify Security/Venurability Testing Guidelines & Checklist |  | 20% → 60% | 163d → 197.88d |
| 219 | Set-up Tools and Required Performance load environments |  | 20% → 40% | 162d → 196.88d |
| 221 | Security Testing & Bug Fixing |  | 20% → 30% | 0.33d → 0.67d |
| 223 | **Performance & Load Testing** |  | 18% → 34% |  |
| 225 | Configure the environment for performance testing |  | 40% → 60% | 1.6d → 2.4d |
| 226 | Additional Testing load on New Modules and Functionalities | 2014-08-04 A | 0% → 25% | 51.12d → 207d |
| 227 | Performance Testing & Bug Fixing |  | 20% → 30% | 143d → 22d |
| 229 | **Regression Testing** |  | 9% → 26% |  |
| 230 | Identify Regression Testing Guidelines & Checklist |  | 33% → 67% | 1.5d → 2.5d |
| 231 | Regression Testing & Bug Fixing |  | 15% → 25% | 143d → 22d |
| 232 | Additional Testing load on New Modules and Functionalities | 2014-08-04 A | 0% → 25% | 51.12d → 207d |
| 234 | **Product Migration Phase (Alpha)** |  | 8% → 11% | 196.29d → 88.41d |
| 235 | **Identify and Plan Migration Strategy for Existing Clients - Review** |  | 8% → 11% | 196.29d → 88.41d |
| 236 | Identify the Areas of the Data Required for Migration and their volumes |  | 40% → 53% | 161.41d → 88.41d |
| 239 | **Product Deployment Phase (Alpha)** | 2014-09-16 A | 0% → 11% |  |
| 240 | **Deployment Strategy Plan** | 2014-09-16 A | 0% → 25% |  |
| 241 | Design & Review Deployment Strategy for Final Client Signoff | 2014-09-16 A | 0% → 25% |  |
| 242 | **Release Readiness Checklist** | 2014-09-16 A | 0% → 13% | 172.88d → 0.22d |
| 243 | Design and Review to Publish Release Readiness for Client Sign off | 2014-09-16 A | 0% → 13% | 172.88d → 0.22d |
| 244 | **Set-up Deployment Infrastructure** | 2014-09-23 A | 0% → 16% |  |
| 245 | Identify The Infrastucture Requirements for Procurements | 2014-09-23 A | 0% → 11% | 172.88d → 0.46d |
| 246 | Get Quotes and Estimates From Providers / Infra Details from Client | 2014-09-25 A | 0% → 15% | 172.88d → 0.25d |
| 247 | Analyse the Final Deployment Infrasture for GO-LIVE | 2014-09-30 A | 0% → 25% |  |

## Version 19 (data date 2013-10-01, saved 2014-10-24, file SmartTouchCRM V 2.024102014.mpp)

Note of the change: adding to git

Last finish stays 2015-05-29. Complete tasks 122 → 153.

Changed:

| ID | Task | Start | Finish | Complete | Total float |
| --- | --- | --- | --- | --- | --- |
| 113 | **Design & Develop Contacts Module** |  |  | 82% → 93% |  |
| 116 | Development of Module |  | 2014-02-19 A | 98% → 100% | 0.87d → none |
| 117 | Change Requests and Enhancements |  |  | 73% → 88% |  |
| 118 | Functional Testing of Module |  | 2014-02-20 A | 87% → 100% | 0.8d → none |
| 119 | Bug Fixing & Stabilize code for Contacts |  | 2014-02-21 A | 80% → 100% | 296d → none |
| 120 | **Design & Develop Campaigns Module** |  |  | 78% → 81% |  |
| 123 | Development of Module |  | 2014-03-27 A | 97% → 100% | 4.25d → none |
| 124 | Change Requests and Enhancements |  |  | 78% → 77% |  |
| 125 | Email Preferances - Updates and Changes |  |  | 7% → 22% |  |
| 126 | Functional Testing of Module |  | 2014-04-03 A | 85% → 100% | 1.75d → none |
| 127 | Bug Fixing & Stabilize code for Campaigns |  | 2014-04-07 A | 88% → 100% | 264.12d → none |
| 128 | **Design & Develop Internet Forms/Lead Captures Module** |  |  | 80% → 61% |  |
| 131 | Development of Module |  | 2014-04-28 A | 98% → 100% | 3.6d → none |
| 132 | Change Requests and Enhancements |  |  | 71% → 37% |  |
| 133 | Functional Testing of Module |  | 2014-05-02 A | 90% → 100% | 1.57d → none |
| 134 | Bug Fixing & Stabilize code for Internet Forms / Lead Captures |  | 2014-05-06 A | 79% → 100% | 278d → none |
| 135 | **Design & Develop Personal Settings Module** |  |  | 84% → 85% |  |
| 138 | Development of Module |  | 2014-04-24 A | 98% → 100% | 3.68d → none |
| 140 | Functional Testing of Module |  | 2014-04-30 A | 92% → 100% | 1.88d → none |
| 141 | Bug Fixing & Stabilize code for Personal Settings |  | 2014-05-02 A | 94% → 100% | 280d → none |
| 142 | **Design & Develop Account Admin Settings Module** |  |  | 61% → 44% |  |
| 145 | Development of Module |  | 2014-06-11 A | 98% → 100% | 3.6d → none |
| 146 | Change Requests and Enhancements |  |  | 35% → 2% |  |
| 147 | Functional Testing of Module |  | 2014-06-17 A | 90% → 100% | 1.75d → none |
| 148 | Bug Fixing & Stabilize code for Account Admin Settings |  | 2014-06-19 A | 88% → 100% | 246d → none |
| 156 | **Design & Develop Opportunities Module** |  |  | 75% → 73% |  |
| 159 | Development of Module |  | 2014-07-18 A | 92% → 100% | 3.2d → none |
| 160 | Change Requests and Enhancements |  |  | 64% → 54% |  |
| 161 | Functional Testing of Module |  | 2014-07-24 A | 80% → 100% | 1.33d → none |
| 162 | Bug Fixing & Stabilize code for Reports |  | 2014-07-28 A | 67% → 100% | 219d → none |
| 163 | **Design & Develop Entitlements** |  |  | 81% → 94% | 63.12d → 219d |
| 167 | Development of Module |  | 2014-07-18 A | 90% → 100% | 2d → none |
| 168 | Functional Testing of Module |  | 2014-07-24 A | 50% → 100% | 1.6d → none |
| 170 | **Design & Develop Advanced Search** |  |  | 77% → 95% |  |
| 173 | Development of Module |  | 2014-07-18 A | 84% → 100% | 2.67d → none |
| 174 | Change Requests and Enhancements |  | 2014-07-11 A | 75% → 100% | 230d → none |
| 175 | Functional Testing of Module |  | 2014-07-24 A | 67% → 100% | 0.67d → none |
| 177 | **Design & Develop 3rd Party Components and Integrations** |  |  | 80% → 95% |  |
| 178 | Design Review and Finalize Data Model |  | 2014-07-31 A | 88% → 100% | 2.81d → none |
| 179 | Integration of Final UI from Prototypes |  | 2014-08-05 A | 94% → 100% | 20.59d → none |
| 180 | Development of Module |  | 2014-09-09 A | 82% → 100% | 3.33d → none |
| 181 | Functional Testing of Module |  | 2014-09-16 A | 67% → 100% | 1.71d → none |
| 182 | Bug Fixing & Stabilize code for 3rd Party Components & Integrations |  |  | 57% → 36% |  |
| 187 | **Module Level Integration & Integration Unit Testing** |  |  | 54% → 60% |  |
| 188 | Module Level Integration |  |  | 74% → 87% | 2.67d → 3.11d |
| 189 | Integration Unit Testing and Bug Fixing |  |  | 67% → 78% |  |
| 192 | **Testing Phase (Alpha)** |  |  | 41% → 54% |  |
| 200 | **Integration Testing** |  |  | 64% → 78% | 0.6d → 0.8d |
| 201 | Identify Integration Testing Guidelines & Checklist |  |  | 75% → 88% | 5.33d → 6.22d |
| 202 | Integration Testing & Bug Fixing |  |  | 67% → 78% | 0.33d → 0.67d |
| 203 | Publish Integration Testing Results for Final UAT |  |  | 33% → 67% | 0.6d → 0.8d |
| 204 | **UI Interface Testing** |  |  | 60% → 79% | 0.5d → 0.67d |
| 205 | Identify UI Interfacing Testing Guidelines & Checklist |  |  | 60% → 80% | 2.86d → 3.43d |
| 206 | UI Testing & Bug Fixing |  |  | 71% → 86% | 0.17d → 0.5d |
| 207 | Publish UI Testing Results for Final UAT |  |  | 17% → 50% |  |
| 208 | **Cross Browser Testing** |  |  | 51% → 68% |  |
| 209 | Identify Browser Compatibillity Testing Guidelines & Checklist |  |  | 33% → 56% | 3.08d → 3.85d |
| 210 | Cross Browser Testing & Bug Fixing |  |  | 62% → 77% | 0.33d → 0.5d |
| 211 | Publish Cross Browser Testing Results for Final UAT |  |  | 33% → 50% |  |
| 212 | **Database design Testing** |  |  | 46% → 72% |  |
| 213 | Identify Database Testing Guidelines & Checklist |  |  | 50% → 67% | 1.2d → 1.5d |
| 214 | Create DB Test Scripts & Test Cases |  |  | 63% → 75% | 1.6d → 2.4d |
| 215 | Database Testing & Bug Fixing |  |  | 40% → 80% | 34d → 0.33d |
| 216 | Publish Databsae Design Testing Results for Final UAT | 2014-09-04 A |  | 0% → 33% |  |
| 217 | **Security Penetration/Venurability Tests** |  |  | 22% → 26% |  |
| 219 | Set-up Tools and Required Performance load environments |  |  | 40% → 50% |  |
| 221 | Security Testing & Bug Fixing |  |  | 30% → 40% | 0.67d → 0.8d |
| 223 | **Performance & Load Testing** |  |  | 34% → 50% |  |
| 225 | Configure the environment for performance testing |  |  | 60% → 80% | 2.4d → 3d |
| 226 | Additional Testing load on New Modules and Functionalities |  |  | 25% → 50% |  |

| ID | Task | Start | Finish | Complete | Total float |
| --- | --- | --- | --- | --- | --- |
| 227 | Performance Testing & Bug Fixing |  |  | 30% → 38% |  |
| 229 | **Regression Testing** |  |  | 26% → 43% |  |
| 230 | Identify Regression Testing Guidelines & Checklist |  |  | 67% → 80% | 2.5d → 3.75d |
| 231 | Regression Testing & Bug Fixing |  |  | 25% → 38% |  |
| 232 | Additional Testing load on New Modules and Functionalities |  |  | 25% → 50% |  |
| 234 | **Product Migration Phase (Alpha)** |  |  | 11% → 36% | 88.41d → 196.29d |
| 235 | **Identify and Plan Migration Strategy for Existing Clients - Review** |  |  | 11% → 36% | 88.41d → 196.29d |
| 237 | Identify the development apporach for migrating data and validate to propose | 2014-08-18 A |  | 0% → 33% | 88.41d → 1.2d |
| 238 | Identify BETA Customers & Analyse the customer data Points for Migration | 2014-08-22 A |  | 0% → 30% | 88.41d → 196.29d |
| 255 | **Product Implementation Phase (Beta)** |  |  | 15% → 35% |  |
| 270 | **Functional Development** |  |  | 2% → 26% |  |
| 271 | **Design & Develop Contacts Module Enhancements** | 2014-09-09 A |  | 0% → 80% |  |
| 272 | Design Review and Finalize Data Model | 2014-09-09 A | 2014-09-11 A | 0% → 100% | 60d → none |
| 273 | Integration of Final UI from Prototypes | 2014-09-11 A | 2014-09-18 A | 0% → 100% | 60d → none |
| 274 | Development of Module | 2014-09-18 A |  | 0% → 76% | 60d → 0.4d |
| 275 | Functional Testing of Module | 2014-10-06 A |  | 0% → 40% | 60d → 0.4d |
| 276 | Bug Fixing & Stabilize code for Contacts | 2014-10-07 A |  | 0% → 40% | 60d → 167.88d |
| 277 | **Design & Develop Marketing Automation Module** | 2014-08-27 A |  | 0% → 14% | 167d → 59.12d |
| 278 | Design Review and Finalize Data Model | 2014-08-27 A |  | 0% → 67% | 59.12d → 0.67d |
| 279 | Integration of Final UI from Prototypes | 2014-09-01 A |  | 0% → 67% | 59.12d → 1.78d |
| 280 | Development of Module | 2014-09-02 A |  | 0% → 9% |  |
| 283 | **Design & Develop of Opportunities Module Enhancements** |  |  | 2% → 49% |  |
| 285 | Integration of Final UI from Prototypes |  | 2014-07-21 A | 0% → 100% | 190d → none |
| 286 | Development of Module |  |  | 0% → 5% | 0d → 6d |
| 287 | Functional Testing of Module |  |  | 0% → 73% | 169d → 203.88d |
| 288 | Bug Fixing & Stabilize code for Opportunities |  |  | 0% → 67% | 169d → 203.88d |
| 304 | **Design & Develop 3rd Party Components and Integrations** | 2014-07-24 A |  | 0% → 36% |  |
| 305 | Design Review and Finalize Data Model | 2014-07-24 A | 2014-10-06 A | 0% → 100% | 169.88d → none |
| 306 | Integration of Final UI from Prototypes | 2014-07-31 A |  | 0% → 3% |  |

## Version 20 (data date 2013-10-01, saved 2014-11-11, file SmartTouchCRM V 2.007112014.mpp)

Note of the change: adding to git

Last finish stays 2015-05-29. Complete tasks 153 → 188.

Changed:

| ID | Task | Start | Finish | Complete | Total float |
| --- | --- | --- | --- | --- | --- |
| 43 | **Product Implementation Phase (Alpha)** |  |  | 87% → 95% |  |
| 79 | **QA Test Preparations & Planning** |  | 2014-01-22 A | 99% → 100% | 352.75d → none |
| 83 | Review and Finalize Test Cases |  | 2014-01-10 A | 89% → 100% | 360.75d → none |
| 86 | **Application Designing & Development Preparation** |  | 2014-07-11 A | 86% → 100% | 230d → none |
| 105 | **Application Security** |  | 2014-07-11 A | 46% → 100% | 230d → none |
| 107 | Change Requests and Enhancements |  | 2014-07-11 A | 19% → 100% | 230d → none |
| 112 | **Functional Development** |  |  | 76% → 90% |  |
| 113 | **Design & Develop Contacts Module** |  | 2014-09-05 A | 93% → 100% | 190d → none |
| 117 | Change Requests and Enhancements |  | 2014-09-05 A | 88% → 100% | 190d → none |
| 120 | **Design & Develop Campaigns Module** |  |  | 81% → 82% |  |
| 124 | Change Requests and Enhancements |  |  | 77% → 78% |  |
| 125 | Email Preferances - Updates and Changes |  |  | 22% → 29% |  |
| 128 | **Design & Develop Internet Forms/Lead Captures Module** |  |  | 61% → 87% |  |
| 132 | Change Requests and Enhancements |  |  | 37% → 79% |  |
| 135 | **Design & Develop Personal Settings Module** |  | 2014-08-22 A | 85% → 100% | 200d → none |
| 139 | Change Requests and Enhancements |  | 2014-08-22 A | 78% → 100% | 200d → none |
| 142 | **Design & Develop Account Admin Settings Module** |  |  | 44% → 78% |  |
| 146 | Change Requests and Enhancements |  |  | 2% → 62% |  |
| 149 | **Design & Develop Super Admin - Accounts Management Module** |  |  | 64% → 67% |  |
| 152 | Development of Module |  | 2014-05-26 A | 96% → 100% | 0.9d → none |
| 154 | Functional Testing of Module |  | 2014-05-27 A | 90% → 100% | 0.89d → none |
| 155 | Bug Fixing & Stabilize code for Super Admin - Accounts Management |  | 2014-05-28 A | 89% → 100% | 262d → none |
| 156 | **Design & Develop Opportunities Module** |  | 2014-08-22 A | 73% → 100% | 200d → none |
| 160 | Change Requests and Enhancements |  | 2014-08-22 A | 54% → 100% |  |
| 163 | **Design & Develop Entitlements** |  | 2014-07-28 A | 94% → 100% | 219d → none |
| 169 | Bug Fixing & Stabilize code for Reports | 2014-07-25 A | 2014-07-28 A | 0% → 100% | 63.12d → none |
| 177 | **Design & Develop 3rd Party Components and Integrations** |  |  | 95% → 98% |  |
| 182 | Bug Fixing & Stabilize code for 3rd Party Components & Integrations |  |  | 36% → 71% |  |
| 183 | **Open API to third party developers** |  |  | 46% → 76% | 181.12d → 216d |
| 184 | Open API to third party developers |  |  | 40% → 80% | 0.33d → 0.67d |
| 185 | Entitlement based updates to the model and enhancements |  |  | 50% → 75% | 195.12d → 230d |
| 186 | Unit & Integration Testing |  |  | 33% → 67% | 4d → 216d |
| 187 | **Module Level Integration & Integration Unit Testing** |  |  | 60% → 87% |  |
| 188 | Module Level Integration |  | 2014-08-07 A | 87% → 100% | 3.11d → none |
| 189 | Integration Unit Testing and Bug Fixing |  |  | 78% → 89% | 0.33d → 0.67d |
| 190 | Impact changes on integration time and code management |  |  | 40% → 80% |  |
| 191 | Build Stabilization & Readyness |  |  | 33% → 67% | 1.07d → 206.29d |
| 192 | **Testing Phase (Alpha)** |  |  | 54% → 83% |  |
| 200 | **Integration Testing** |  |  | 78% → 87% | 0.8d → 206.88d |
| 202 | Integration Testing & Bug Fixing |  |  | 78% → 89% |  |
| 204 | **UI Interface Testing** |  |  | 79% → 92% | 0.67d → 200.88d |
| 205 | Identify UI Interfacing Testing Guidelines & Checklist |  | 2014-08-15 A | 80% → 100% | 3.43d → none |
| 206 | UI Testing & Bug Fixing |  |  | 86% → 93% | 0.5d → 0.83d |
| 207 | Publish UI Testing Results for Final UAT |  |  | 50% → 83% | 0.5d → 1.8d |
| 208 | **Cross Browser Testing** |  |  | 68% → 91% |  |
| 209 | Identify Browser Compatibillity Testing Guidelines & Checklist |  | 2014-08-18 A | 56% → 100% | 3.85d → none |
| 210 | Cross Browser Testing & Bug Fixing |  |  | 77% → 92% | 0.5d → 0.67d |
| 211 | Publish Cross Browser Testing Results for Final UAT |  |  | 50% → 67% |  |
| 212 | **Database design Testing** |  |  | 72% → 90% | 190.88d → 0d |
| 213 | Identify Database Testing Guidelines & Checklist |  | 2014-08-25 A | 67% → 100% | 1.5d → none |
| 214 | Create DB Test Scripts & Test Cases |  |  | 75% → 88% |  |
| 215 | Database Testing & Bug Fixing |  |  | 80% → 87% | 0.33d → 189.88d |
| 216 | Publish Databsae Design Testing Results for Final UAT |  | 2014-09-05 A | 33% → 100% | 190.88d → none |
| 217 | **Security Penetration/Venurability Tests** |  |  | 26% → 66% |  |
| 218 | Identify Security/Venurability Testing Guidelines & Checklist |  | 2014-08-27 A | 60% → 100% | 197.88d → none |
| 220 | Additional Testing load on New Modules and Functionalities | 2014-08-04 A |  | 0% → 50% | 51.12d → 207d |
| 221 | Security Testing & Bug Fixing |  |  | 40% → 90% | 0.8d → 189.88d |
| 222 | Publish Security Penetration/Venurability Testing Results for Final UAT | 2014-09-04 A |  | 0% → 33% | 34d → 189.88d |
| 223 | **Performance & Load Testing** |  |  | 50% → 78% |  |
| 226 | Additional Testing load on New Modules and Functionalities |  |  | 50% → 75% |  |
| 227 | Performance Testing & Bug Fixing |  |  | 38% → 80% | 22d → 0d |
| 228 | Publish Performance Testing Results for Final UAT | 2014-09-23 A |  | 0% → 67% | 22d → 177.88d |
| 229 | **Regression Testing** |  |  | 43% → 88% |  |
| 230 | Identify Regression Testing Guidelines & Checklist |  | 2014-09-09 A | 80% → 100% | 3.75d → none |
| 231 | Regression Testing & Bug Fixing |  |  | 38% → 80% | 22d → 0.67d |
| 232 | Additional Testing load on New Modules and Functionalities |  | 2014-08-13 A | 50% → 100% | 207d → none |
| 233 | Publish Regression Testing Results for Final UAT | 2014-09-23 A |  | 0% → 67% | 22d → 177.88d |
| 234 | **Product Migration Phase (Alpha)** |  |  | 36% → 90% |  |
| 235 | **Identify and Plan Migration Strategy for Existing Clients - Review** |  |  | 36% → 90% |  |
| 236 | Identify the Areas of the Data Required for Migration and their volumes |  | 2014-08-18 A | 53% → 100% | 1.33d → none |

| ID | Task | Start | Finish | Duration | Complete | Total float |
| --- | --- | --- | --- | --- | --- | --- |
| 237 | Identify the development apporach for migrating data and validate to propose |  | 2014-08-22 A |  | 33% → 100% | 1.2d → none |
| 238 | Identify BETA Customers & Analyse the customer data Points for Migration |  |  |  | 30% → 75% |  |
| 239 | **Product Deployment Phase (Alpha)** |  | 2014-10-03 A |  | 11% → 100% | 170.88d → none |
| 240 | **Deployment Strategy Plan** |  | 2014-09-22 A |  | 25% → 100% | 179.88d → none |
| 241 | Design & Review Deployment Strategy for Final Client Signoff |  | 2014-09-22 A |  | 25% → 100% | 179.88d → none |
| 242 | **Release Readiness Checklist** |  | 2014-09-23 A |  | 13% → 100% | 0.22d → none |
| 243 | Design and Review to Publish Release Readiness for Client Sign off |  | 2014-09-23 A |  | 13% → 100% | 0.22d → none |
| 244 | **Set-up Deployment Infrastructure** |  | 2014-10-01 A |  | 16% → 100% | 172.88d → none |
| 245 | Identify The Infrastucture Requirements for Procurements |  | 2014-09-25 A |  | 11% → 100% | 0.46d → none |
| 246 | Get Quotes and Estimates From Providers / Infra Details from Client |  | 2014-09-30 A |  | 15% → 100% | 0.25d → none |
| 247 | Analyse the Final Deployment Infrasture for GO-LIVE |  | 2014-10-01 A |  | 25% → 100% | 172.88d → none |
| 248 | **GO-LIVE** | 2014-09-23 A | 2014-10-03 A |  | 0% → 100% | 170.88d → none |
| 249 | Prepare the Deployable Code / DB for GOLIVE | 2014-09-23 A | 2014-09-25 A |  | 0% → 100% | 174.88d → none |
| 250 | Environment Set-up for GOLIVE | 2014-09-30 A | 2014-10-01 A |  | 0% → 100% | 171.88d → none |
| 251 | Deploy Code on Servers & Configure Initial Settings | 2014-10-01 A | 2014-10-02 A |  | 0% → 100% | 171.88d → none |
| 252 | Deploy all Schedulars and Services for GOLIVE | 2014-10-01 A | 2014-10-02 A |  | 0% → 100% | 171.88d → none |
| 253 | Smoke Test for final GOLIVE Validation | 2014-10-01 A | 2014-10-03 A |  | 0% → 100% | 170.88d → none |
| 254 | Publish GOLIVE Notifications | 2014-10-02 A | 2014-10-03 A |  | 0% → 100% | 170.88d → none |
| 255 | **Product Implementation Phase (Beta)** |  |  |  | 35% → 80% |  |
| 270 | **Functional Development** |  |  |  | 26% → 78% |  |
| 271 | **Design & Develop Contacts Module Enhancements** |  |  |  | 80% → 94% |  |
| 274 | Development of Module |  | 2014-10-06 A |  | 76% → 100% | 0.4d → none |
| 277 | **Design & Develop Marketing Automation Module** |  |  |  | 14% → 56% | 59.12d → 167d |
| 278 | Design Review and Finalize Data Model |  |  |  | 67% → 80% | 0.67d → 0.8d |
| 279 | Integration of Final UI from Prototypes |  |  |  | 67% → 80% | 1.78d → 14.22d |
| 280 | Development of Module |  |  |  | 9% → 71% | 59.12d → 167d |
| 283 | **Design & Develop of Opportunities Module Enhancements** |  | 2014-08-19 → 2014-08-21 (+2d) | 30d → 32.88d | 49% → 89% | 203.88d → 201d |
| 286 | Development of Module |  | 2014-08-05 A |  | 5% → 100% | 6d → none |
| 287 | Functional Testing of Module |  |  |  | 73% → 93% |  |
| 288 | Bug Fixing & Stabilize code for Opportunities |  | 2014-08-19 → 2014-08-21 (+2d) | 15d → 17.88d | 67% → 73% | 203.88d → 201d |
| 289 | **Design & Develop Account Dashboard Module** |  |  |  | 7% → 82% |  |
| 290 | Design Review and Finalize Data Model |  |  |  | 10% → 75% | 0d → 0.7d |
| 291 | Integration of Final UI from Prototypes |  |  |  | 0% → 99% | 159.01d → 26.68d |
| 292 | Development of Module | 2014-08-26 A |  |  | 0% → 67% | 64d → 9.67d |
| 293 | Change Requests and Enhancements - UI |  | 2014-09-09 A |  | 60% → 100% | 154d → none |
| 294 | Change Requests and Enhancements - Scope Enhancement | 2014-08-27 A | 2014-09-09 A |  | 0% → 100% | 80.12d → none |
| 295 | Functional Testing of Module | 2014-09-09 A |  |  | 0% → 67% | 61d → 168.88d |
| 297 | **Design & Develop Account Reports Module** |  |  |  | 1% → 66% |  |
| 298 | Design Review and Finalize Data Model |  |  |  | 25% → 75% | 0d → 0.42d |
| 299 | Integration of Final UI from Prototypes |  |  |  | 1% → 99% | 151.25d → 29.7d |
| 300 | Development of Module | 2014-08-26 A |  |  | 0% → 62% | 61d → 3.2d |
| 302 | Functional Testing of Module | 2014-09-23 A |  |  | 0% → 40% | 61d → 0.67d |
| 303 | Bug Fixing & Stabilize code for Reports | 2014-10-03 A |  |  | 0% → 33% | 61d → 168.88d |
| 304 | **Design & Develop 3rd Party Components and Integrations** |  |  |  | 36% → 81% |  |
| 306 | Integration of Final UI from Prototypes |  | 2014-10-06 A |  | 3% → 100% | 169.31d → none |
| 307 | Development of Module | 2014-08-05 A |  |  | 0% → 56% |  |
| 308 | Functional Testing of Module | 2014-09-09 A |  |  | 0% → 30% |  |
| 309 | Bug Fixing & Stabilize code for 3rd Party Components & Integrations | 2014-09-16 A |  |  | 0% → 12% |  |
| 310 | **Module Level Integration & Integration Unit Testing** | 2014-10-07 A |  |  | 0% → 27% | 157.88d → 161.88d |
| 311 | Module Level Integration | 2014-10-07 A |  |  | 0% → 35% |  |
| 312 | Integration Unit Testing and Bug Fixing | 2014-10-09 A |  |  | 0% → 14% |  |
| 313 | Build Stabilization & Readyness | 2014-10-15 A |  |  | 0% → 35% |  |
| 314 | **Testing Phase (Beta)** |  |  |  | 1% → 23% |  |
| 315 | **Integration Testing** |  |  |  | 6% → 55% |  |
| 317 | Integration Testing & Bug Fixing |  |  |  | 6% → 61% | 108.12d → 143d |
| 318 | Publish Integration Testing Results for Final UAT | 2014-11-11 A |  |  | 0% → 11% | 33.12d → 141d |
| 319 | **UI Interface & Cross Borwser Testing** | 2014-09-04 A |  |  | 0% → 12% |  |
| 320 | Identify UI Interfacing Testing Guidelines & Checklist | 2014-09-04 A |  |  | 0% → 25% | 165.41d → 190d |
| 321 | UI Testing & Bug Fixing | 2014-09-04 A |  |  | 0% → 10% | 137.41d → 162d |
| 322 | Publish UI Testing Results for Final UAT | 2014-10-16 A |  |  | 0% → 30% | 135.41d → 160d |
| 323 | **Database design & Load / Performance Testing** | 2014-10-08 A |  |  | 0% → 14% |  |
| 324 | Identify Database Testing Guidelines & Checklist | 2014-10-08 A |  |  | 0% → 17% | 139.41d → 165d |
| 325 | Create DB Test Scripts & Test Cases | 2014-10-13 A |  |  | 0% → 13% | 129.41d → 155d |
| 326 | Database Testing & Bug Fixing | 2014-10-20 A |  |  | 0% → 13% | 114.41d → 140d |
| 327 | Publish Databsae Design Testing Results for Final UAT | 2014-11-18 A |  |  | 0% → 33% | 112.41d → 138d |
| 328 | **Regression / UAT Testing** | 2014-11-10 A |  |  | 0% → 15% |  |
| 329 | Identify Regression Testing Guidelines & Checklist | 2014-11-18 A |  |  | 0% → 67% | 29.12d → 137d |
| 330 | Regression Testing & Bug Fixing | 2014-11-10 A |  |  | 0% → 11% | 7.12d → 115d |
| 331 | Publish Regression Testing Results for Final UAT | 2014-12-23 A |  |  | 0% → 33% | 5.12d → 113d |
| 332 | **Product Migration Phase (Beta)** | 2014-10-16 A |  |  | 0% → 15% |  |

| ID | Task | Start | Complete | Total float |
| --- | --- | --- | --- | --- |
| 333 | **Migration Readiness for Existing Small Clients** | 2014-10-16 A | 0% → 13% |  |
| 334 | Development of Data Migration Services & Validation Scripts | 2014-10-16 A | 0% → 67% | 44d → 151.88d |
| 337 | **Identify and Plan Migration Strategy for New Clients** | 2014-11-27 A | 0% → 16% |  |
| 338 | Development of Data Migration Services & Validation Scripts | 2014-11-27 A | 0% → 27% | 2d → 109.88d |
